# C:\Documents and Settings\Edmond\My Documents\caAERS-ProjectSchedule-ConstructionPhase

Schedule from MS Project, 2006-12-01 to 2007-09-21, A marks actual dates.

## Calendars

- Standard: Mon-Fri 08:00-12:00, 13:00-17:00; Sat-Sun off. Exceptions (off unless hours are given): 2006-12-25, 2007-01-01.

## Resources

| Resource |
| --- |
| Warren |
| Cal |
| Renee |
| Rhett |
| Vinay |
| Joshua |
| Padmaja |
| Richard |
| Krikor |
| John |
| Ram |
| Sujith |
| David |
| Brenda |
| Natasha |
| Mayo |
| WF |
| AE_SIG |
| VCDE_WS |
| Arch_WS |
| Edmond |
| Functional Team Lead |
| Dave |
| CCB |
| Sean |
| BAH |
| Kulasekeran |
| Kulasekaran |

## Schedule

| ID | WBS | Task | Type | Duration | Start | Finish | Predecessors | Complete | Remaining | Baseline start | Baseline finish | Baseline duration | Total slack | Constraint | Resources | Work | Actual work | Text1 |
| --- | --- | --- | --- | --- | --- | --- | --- | --- | --- | --- | --- | --- | --- | --- | --- | --- | --- | --- |
| 1 | 1 | **caAERS Application Development Project** |  | 209d? | 2006-12-01 A | 2007-09-21 |  | 27% | 152.08d? | 2006-12-01 | 2007-09-26 | 212d | 0d |  |  | 21992.2h | 9994.06h |  |
| 2 | 1.1 | **Elaboration Phase** |  | 57d | 2006-12-01 A | 2007-02-21 |  | 72% | 15.81d | 2006-12-01 | 2007-02-01 | 43d | 157d |  |  | 13360.2h | 9994.06h |  |
| 3 | 1.1.1 | **Iteration 1** |  | 31d | 2006-12-01 A | 2007-01-16 |  | 87% | 3.95d | 2006-12-01 | 2007-01-03 | 22d | 183d |  |  | 8120.24h | 7022.06h |  |
| 4 | 1.1.1.1 | **Project Management** |  | 31d | 2006-12-01 A | 2007-01-16 |  | 75% | 7.82d | 2006-12-01 | 2007-01-03 | 22d | 183d |  |  | 2736h | 2512h |  |
| 5 | 1.1.1.1.1 | **Inception and Kickoff Planning** |  | 6d | 2006-12-01 A | 2006-12-08 A |  | 100% |  | 2006-12-01 | 2006-12-08 | 6d |  |  |  | 200h | 200h |  |
| 6 | 1.1.1.1.1.1 | Draft Project Management Plan |  | 3d | 2006-12-01 A | 2006-12-05 A |  | 100% |  | 2006-12-01 | 2006-12-05 | 3d |  |  | Edmond; Ram; Vinay | 72h | 72h |  |
| 7 | 1.1.1.1.1.2 | High-Level Schedule and Assignments |  | 3d | 2006-12-01 A | 2006-12-05 A |  | 100% |  | 2006-12-01 | 2006-12-05 | 3d |  |  | Edmond; Ram; Vinay | 72h | 72h | GANTT |
| 8 | 1.1.1.1.1.3 | Kickoff Meeting | milestone | 1d | 2006-12-06 A | 2006-12-06 A |  | 100% |  | 2006-12-06 | 2006-12-06 | 1d |  | start no earlier than 2006-12-06 | Edmond; Ram; Vinay; Warren; Renee; Cal | 48h | 48h |  |
| 9 | 1.1.1.1.1.4 | Kickoff Meeting Notes (Task 1.5) |  | 1d | 2006-12-08 A | 2006-12-08 A | 8FS+1d | 100% |  | 2006-12-08 | 2006-12-08 | 1d |  |  | Edmond | 8h | 8h | Kickoff Minutes |
| 10 | 1.1.1.1.2 | **Project Management Plan Baseline (Task 1.1)** |  | 25d | 2006-12-11 A | 2007-01-16 |  | 44% | 14d | 2006-12-11 | 2006-12-26 | 11d | 183d |  |  | 408h | 296h |  |
| 11 | 1.1.1.1.2.1 | Add Details for Elaboration Phase to Project Plan |  | 3d | 2006-12-11 A | 2006-12-13 A | 9 | 100% |  | 2006-12-11 | 2006-12-13 | 3d |  |  | Edmond; Ram; Vinay | 72h | 72h |  |
| 12 | 1.1.1.1.2.2 | Resource Load and Level Project Schedule for Elaboration Phase |  | 1d | 2006-12-14 A | 2006-12-14 A | 11 | 100% |  | 2006-12-14 | 2006-12-14 | 1d |  |  | Edmond | 8h | 8h |  |
| 13 | 1.1.1.1.2.3 | Adopters/Collaborators Review |  | 5d | 2006-12-15 A | 2006-12-21 A | 12 | 100% |  | 2006-12-15 | 2006-12-21 | 5d |  |  | Mayo; WF; AE_SIG; VCDE_WS; Arch_WS | 200h | 200h |  |
| 14 | 1.1.1.1.2.4 | Updates |  | 2d | 2006-12-22 A | 2006-12-26 A | 13 | 100% |  | 2006-12-22 | 2006-12-26 | 2d |  |  | Edmond | 16h | 16h |  |
| 15 | 1.1.1.1.2.5 | Submit to BAH | milestone | 0d | 2006-12-26 A | 2006-12-26 A | 14 | 100% |  | 2006-12-26 | 2006-12-26 | 0d |  |  | Edmond |  |  |  |
| 16 | 1.1.1.1.2.6 | Formal Review by BAH |  | 14d | 2006-12-27 | 2007-01-16 | 15 |  |  |  |  |  | 181d |  | BAH | 112h |  |  |
| 17 | 1.1.1.1.3 | **Communications Plan (Task 1.2)** |  | 25d | 2006-12-01 A | 2007-01-08 |  | 44% | 14d | 2006-12-01 | 2006-12-15 | 11d | 189d |  |  | 480h | 368h |  |
| 18 | 1.1.1.1.3.1 | Developers Draft |  | 5d | 2006-12-01 A | 2006-12-07 A |  | 100% |  | 2006-12-01 | 2006-12-07 | 5d |  |  | Edmond; Ram; Warren; Cal | 160h | 160h |  |
| 19 | 1.1.1.1.3.2 | Adopters/Collaborators Review |  | 5d | 2006-12-08 A | 2006-12-14 A | 18 | 100% |  | 2006-12-08 | 2006-12-14 | 5d |  |  | Mayo; WF; AE_SIG; VCDE_WS; Arch_WS | 200h | 200h |  |
| 20 | 1.1.1.1.3.3 | Developers Update |  | 1d | 2006-12-15 A | 2006-12-15 A | 19 | 100% |  | 2006-12-15 | 2006-12-15 | 1d |  |  | Edmond | 8h | 8h | Communications Plan |
| 21 | 1.1.1.1.3.4 | Submit to BAH | milestone | 0d | 2006-12-15 A | 2006-12-15 A | 20 | 100% |  | 2006-12-15 | 2006-12-15 | 0d |  |  | Edmond |  |  |  |
| 22 | 1.1.1.1.3.5 | Formal Review by BAH |  | 14d | 2006-12-18 | 2007-01-08 | 21 |  |  |  |  |  | 187d |  | BAH | 112h |  |  |
| 23 | 1.1.1.1.4 | **Adopters Collaboration Plan** |  | 11d | 2006-12-01 A | 2006-12-15 A |  | 100% |  | 2006-12-01 | 2006-12-15 | 11d |  |  |  | 368h | 368h | Collaboration Plan |
| 24 | 1.1.1.1.4.1 | Developers Draft |  | 5d | 2006-12-01 A | 2006-12-07 A |  | 100% |  | 2006-12-01 | 2006-12-07 | 5d |  |  | Edmond; Ram; Warren; Cal | 160h | 160h |  |
| 25 | 1.1.1.1.4.2 | Adopters/Collaborators Review |  | 5d | 2006-12-08 A | 2006-12-14 A | 24 | 100% |  | 2006-12-08 | 2006-12-14 | 5d |  |  | Mayo; WF; AE_SIG; VCDE_WS; Arch_WS | 200h | 200h |  |
| 26 | 1.1.1.1.4.3 | Developers Update |  | 1d | 2006-12-15 A | 2006-12-15 A | 25 | 100% |  | 2006-12-15 | 2006-12-15 | 1d |  |  | Edmond | 8h | 8h |  |
| 27 | 1.1.1.1.4.4 | Submit to BAH | milestone | 0d | 2006-12-15 A | 2006-12-15 A | 26 | 100% |  | 2006-12-15 | 2006-12-15 | 0d |  |  | Edmond |  |  |  |

| ID | WBS | Task | Type | Duration | Start | Finish | Predecessors | Complete | Baseline start | Baseline finish | Baseline duration | Constraint | Resources | Work | Actual work | Text1 |
| --- | --- | --- | --- | --- | --- | --- | --- | --- | --- | --- | --- | --- | --- | --- | --- | --- |
| 28 | 1.1.1.1.5 | **Risk and Issue Management Plan** |  | 11d | 2006-12-01 A | 2006-12-15 A |  | 100% | 2006-12-01 | 2006-12-15 | 11d |  |  | 248h | 248h | Risk Matrix |
| 29 | 1.1.1.1.5.1 | Developers Draft |  | 5d | 2006-12-01 A | 2006-12-07 A |  | 100% | 2006-12-01 | 2006-12-07 | 5d |  | Edmond | 40h | 40h |  |
| 30 | 1.1.1.1.5.2 | Adopters/Collaborators Review |  | 5d | 2006-12-08 A | 2006-12-14 A | 29 | 100% | 2006-12-08 | 2006-12-14 | 5d |  | Mayo; WF; AE_SIG; VCDE_WS; Arch_WS | 200h | 200h |  |
| 31 | 1.1.1.1.5.3 | Developers Update |  | 1d | 2006-12-15 A | 2006-12-15 A | 30 | 100% | 2006-12-15 | 2006-12-15 | 1d |  | Edmond | 8h | 8h |  |
| 32 | 1.1.1.1.5.4 | Submit to BAH | milestone | 0d | 2006-12-15 A | 2006-12-15 A | 31 | 100% | 2006-12-15 | 2006-12-15 | 0d |  | Edmond |  |  |  |
| 33 | 1.1.1.1.6 | **caAERS Vision and Scope Document (Task 1.8)** |  | 11d | 2006-12-06 A | 2006-12-20 A |  | 100% | 2006-12-06 | 2006-12-20 | 11d |  |  | 400h | 400h | Scope Document |
| 34 | 1.1.1.1.6.1 | Developers Draft |  | 5d | 2006-12-06 A | 2006-12-12 A |  | 100% | 2006-12-06 | 2006-12-12 | 5d | start no earlier than 2006-12-06 | Warren; Cal; Renee; Ram | 160h | 160h |  |
| 35 | 1.1.1.1.6.2 | Adopters/Collaborators Review |  | 5d | 2006-12-13 A | 2006-12-19 A | 34 | 100% | 2006-12-13 | 2006-12-19 | 5d |  | Mayo; WF; AE_SIG; VCDE_WS; Arch_WS | 200h | 200h |  |
| 36 | 1.1.1.1.6.3 | Developers Update |  | 1d | 2006-12-20 A | 2006-12-20 A | 35 | 100% | 2006-12-20 | 2006-12-20 | 1d |  | Warren; Cal; Renee; Ram; Edmond | 40h | 40h |  |
| 37 | 1.1.1.1.6.4 | Submit to BAH | milestone | 0d | 2006-12-20 A | 2006-12-20 A | 36 | 100% | 2006-12-20 | 2006-12-20 | 0d |  | Edmond |  |  |  |
| 38 | 1.1.1.1.7 | **Test and QA Mgmt Plan Document (Task 2.6)** |  | 9d | 2006-12-18 A | 2006-12-29 A |  | 100% | 2006-12-18 | 2006-12-29 | 9d |  |  | 328h | 328h |  |
| 39 | 1.1.1.1.7.1 | Developer Draft |  | 3d | 2006-12-18 A | 2006-12-20 A |  | 100% | 2006-12-18 | 2006-12-20 | 3d | start no earlier than 2006-12-18 | Edmond; Vinay; Joshua; Rhett; Natasha | 120h | 120h |  |
| 40 | 1.1.1.1.7.2 | Adopters/Collobators Review |  | 5d | 2006-12-21 A | 2006-12-28 A | 39 | 100% | 2006-12-21 | 2006-12-28 | 5d |  | Mayo; WF; AE_SIG; VCDE_WS; Arch_WS | 200h | 200h |  |
| 41 | 1.1.1.1.7.3 | Developer Update |  | 1d | 2006-12-29 A | 2006-12-29 A | 40 | 100% | 2006-12-29 | 2006-12-29 | 1d |  | Edmond | 8h | 8h |  |
| 42 | 1.1.1.1.7.4 | Submit to BAH | milestone | 0d | 2006-12-29 A | 2006-12-29 A | 41 | 100% | 2006-12-29 | 2006-12-29 | 0d |  | Edmond |  |  |  |
| 43 | 1.1.1.1.8 | **caAERS F2F (Cross-Cutting WS) Meeting Planning** |  | 13d | 2006-12-01 A | 2006-12-19 A |  | 100% | 2006-12-01 | 2006-12-19 | 13d |  |  | 136h | 136h |  |
| 44 | 1.1.1.1.8.1 | Set Date |  | 1d | 2006-12-01 A | 2006-12-01 A |  | 100% | 2006-12-01 | 2006-12-01 | 1d |  | Edmond | 8h | 8h |  |
| 45 | 1.1.1.1.8.2 | Draft Agenda |  | 1d | 2006-12-15 A | 2006-12-15 A | 7 | 100% | 2006-12-15 | 2006-12-15 | 1d | start no earlier than 2006-12-15 | Ram; Vinay; Warren; Cal; Renee; Edmond | 48h | 48h |  |
| 46 | 1.1.1.1.8.3 | Review by Adopters/Collaborators |  | 2d | 2006-12-18 A | 2006-12-19 A | 45 | 100% | 2006-12-18 | 2006-12-19 | 2d |  | Mayo; WF; AE_SIG; VCDE_WS; Arch_WS | 80h | 80h |  |
| 47 | 1.1.1.1.8.4 | Finalize F2F Meeting Agenda and Details | milestone | 0d | 2006-12-19 A | 2006-12-19 A | 46 | 100% | 2006-12-19 | 2006-12-19 | 0d |  | Edmond |  |  |  |
| 48 | 1.1.1.1.9 | **Weekly Team/Developers Meeting** |  | 11d | 2006-12-11 A | 2006-12-26 A |  | 100% | 2006-12-11 | 2006-12-26 | 11d |  |  | 72h | 72h |  |
| 49 | 1.1.1.1.9.1 | Weekly Team Meeting 1 |  | 1d | 2006-12-11 A | 2006-12-11 A |  | 100% | 2006-12-11 | 2006-12-11 | 1d | start no earlier than 2006-12-11 | Edmond; Vinay; Functional Team Lead | 24h | 24h |  |
| 50 | 1.1.1.1.9.2 | Weekly Team Meeting 2 |  | 1d | 2006-12-18 A | 2006-12-18 A |  | 100% | 2006-12-18 | 2006-12-18 | 1d | start no earlier than 2006-12-18 | Edmond; Vinay; Functional Team Lead | 24h | 24h |  |
| 51 | 1.1.1.1.9.3 | Weekly Team Meeting 3 |  | 1d | 2006-12-26 A | 2006-12-26 A |  | 100% | 2006-12-26 | 2006-12-26 | 1d | start no earlier than 2006-12-25 | Edmond; Vinay; Functional Team Lead | 24h | 24h |  |

| ID | WBS | Task | Type | Duration | Start | Finish | Predecessors | Complete | Baseline start | Baseline finish | Baseline duration | Constraint | Resources | Work | Actual work |
| --- | --- | --- | --- | --- | --- | --- | --- | --- | --- | --- | --- | --- | --- | --- | --- |
| 52 | 1.1.1.1.10 | **Status and Risk Reporting** |  | 10d | 2006-12-15 A | 2006-12-29 A |  | 100% | 2006-12-15 | 2006-12-29 | 10d |  |  | 32h | 32h |
| 53 | 1.1.1.1.10.1 | Bi-weekly Risk Update in caMP (Task 1.4) | milestone | 0d | 2006-12-15 A | 2006-12-15 A |  | 100% | 2006-12-15 | 2006-12-15 | 0d | start no earlier than 2006-12-15 | Edmond |  |  |
| 54 | 1.1.1.1.10.2 | Bi-weekly Risk Matrix Update Meeting |  | 1d | 2006-12-22 A | 2006-12-22 A |  | 100% | 2006-12-22 | 2006-12-22 | 1d | start no earlier than 2006-12-22 | Edmond; Vinay | 16h | 16h |
| 55 | 1.1.1.1.10.3 | Bi-weekly Risk Update in caMP (Task 1.4) | milestone | 0d | 2006-12-29 A | 2006-12-29 A |  | 100% | 2006-12-29 | 2006-12-29 | 0d | start no earlier than 2006-12-29 | Edmond |  |  |
| 56 | 1.1.1.1.10.4 | Bi-weekly Status Update Meeting with BAH/NCI |  | 1d | 2006-12-29 A | 2006-12-29 A |  | 100% | 2006-12-29 | 2006-12-29 | 1d | start no earlier than 2006-12-29 | Edmond; Vinay | 16h | 16h |
| 57 | 1.1.1.1.10.5 | Monthly Status Report (Task 1.3) | milestone | 0d | 2006-12-29 A | 2006-12-29 A |  | 100% | 2006-12-29 | 2006-12-29 | 0d | start no earlier than 2006-12-29 | Edmond |  |  |
| 58 | 1.1.1.1.10.6 | Monthly Risk Matrix Update (Task 1.3) | milestone | 0d | 2006-12-29 A | 2006-12-29 A |  | 100% | 2006-12-29 | 2006-12-29 | 0d | must finish on 2006-12-29 |  |  |  |
| 59 | 1.1.1.1.11 | **Collaboration Management Activities** |  | 10d | 2006-12-14 A | 2006-12-28 A |  | 100% | 2006-12-14 | 2006-12-28 | 10d |  |  | 64h | 64h |
| 60 | 1.1.1.1.11.1 | Bi-Weekly AE SIG Meeting |  | 1d | 2006-12-14 A | 2006-12-14 A |  | 100% | 2006-12-14 | 2006-12-14 | 1d | start no earlier than 2006-12-14 | Edmond; Warren; Cal; Renee | 32h | 32h |
| 61 | 1.1.1.1.11.2 | Bi-Weekly AE SIG Meeting |  | 1d | 2006-12-28 A | 2006-12-28 A |  | 100% | 2006-12-28 | 2006-12-28 | 1d | start no earlier than 2006-12-28 | Edmond; Warren; Cal; Renee | 32h | 32h |
| 62 | 1.1.1.2 | **Set up Development Environment** |  | 7d | 2006-12-01 A | 2006-12-11 A |  | 100% | 2006-12-01 | 2006-12-11 | 7d |  |  | 144h | 144h |
| 63 | 1.1.1.2.1 | Set up SCM (Subversion) |  | 2d | 2006-12-01 A | 2006-12-04 A |  | 100% | 2006-12-01 | 2006-12-04 | 2d |  | Rhett; Vinay | 32h | 32h |
| 64 | 1.1.1.2.2 | Create Build Scripts (using Ant) |  | 3d | 2006-12-05 A | 2006-12-07 A | 63 | 100% | 2006-12-05 | 2006-12-07 | 3d |  | Rhett | 24h | 24h |
| 65 | 1.1.1.2.3 | Decide on Tech Stack |  | 2d | 2006-12-01 A | 2006-12-04 A |  | 100% | 2006-12-01 | 2006-12-04 | 2d |  | Rhett; Vinay; Joshua | 48h | 48h |
| 66 | 1.1.1.2.4 | Prepare Development Server |  | 5d | 2006-12-05 A | 2006-12-11 A | 65 | 100% | 2006-12-05 | 2006-12-11 | 5d |  | Vinay | 40h | 40h |
| 67 | 1.1.1.3 | **Requirements** |  | 20d | 2006-12-01 A | 2006-12-29 A |  | 100% | 2006-12-01 | 2006-12-29 | 20d |  |  | 1392h | 1392h |
| 68 | 1.1.1.3.1 | Review Existing R1 Prototype and Requirements |  | 5d | 2006-12-01 A | 2006-12-07 A |  | 100% | 2006-12-01 | 2006-12-07 | 5d |  | Vinay; Joshua; Rhett; Krikor; Padmaja; Sujith; Renee; David; Brenda; Natasha | 400h | 400h |
| 69 | 1.1.1.3.2 | Select Use Cases |  | 1d | 2006-12-08 A | 2006-12-08 A | 68 | 100% | 2006-12-08 | 2006-12-08 | 1d |  | Ram; Vinay | 16h | 16h |
| 70 | 1.1.1.3.3 | Assign Use Cases |  | 1d | 2006-12-11 A | 2006-12-11 A | 69 | 100% | 2006-12-11 | 2006-12-11 | 1d |  | Ram; Vinay | 16h | 16h |
| 71 | 1.1.1.3.4 | **Review and Update Use Case Documents (Task 2.1)** |  | 8d | 2006-12-12 A | 2006-12-21 A | 70 | 100% | 2006-12-12 | 2006-12-21 | 8d |  |  | 632h | 632h |
| 72 | 1.1.1.3.4.1 | **Create Study/Protocol** |  | 8d | 2006-12-12 A | 2006-12-21 A |  | 100% | 2006-12-12 | 2006-12-21 | 8d |  |  | 248h | 248h |
| 73 | 1.1.1.3.4.1.1 | Developer draft |  | 5d | 2006-12-12 A | 2006-12-18 A |  | 100% | 2006-12-12 | 2006-12-18 | 5d |  | Padmaja; Sujith; Renee; Dave | 160h | 160h |
| 74 | 1.1.1.3.4.1.2 | Adopters/Collaborators Review |  | 2d | 2006-12-19 A | 2006-12-20 A | 73 | 100% | 2006-12-19 | 2006-12-20 | 2d |  | Mayo; WF; AE_SIG; VCDE_WS; Arch_WS | 80h | 80h |
| 75 | 1.1.1.3.4.1.3 | Developers Update |  | 1d | 2006-12-21 A | 2006-12-21 A | 74 | 100% | 2006-12-21 | 2006-12-21 | 1d |  | John | 8h | 8h |
| 76 | 1.1.1.3.4.1.4 | Submit to BAH (Task 2.1) | milestone | 0d | 2006-12-21 A | 2006-12-21 A | 75 | 100% | 2006-12-21 | 2006-12-21 | 0d |  | Edmond |  |  |

| ID | WBS | Task | Type | Duration | Start | Finish | Predecessors | Complete | Remaining | Baseline start | Baseline finish | Baseline duration | Total slack | Resources | Work | Actual work |
| --- | --- | --- | --- | --- | --- | --- | --- | --- | --- | --- | --- | --- | --- | --- | --- | --- |
| 77 | 1.1.1.3.4.2 | **Create Participant** |  | 8d | 2006-12-12 A | 2006-12-21 A |  | 100% |  | 2006-12-12 | 2006-12-21 | 8d |  |  | 128h | 128h |
| 78 | 1.1.1.3.4.2.1 | Developer draft |  | 5d | 2006-12-12 A | 2006-12-18 A |  | 100% |  | 2006-12-12 | 2006-12-18 | 5d |  | Krikor | 40h | 40h |
| 79 | 1.1.1.3.4.2.2 | Adopters/Collaborators Review |  | 2d | 2006-12-19 A | 2006-12-20 A | 78 | 100% |  | 2006-12-19 | 2006-12-20 | 2d |  | Mayo; WF; AE_SIG; VCDE_WS; Arch_WS | 80h | 80h |
| 80 | 1.1.1.3.4.2.3 | Developers Update |  | 1d | 2006-12-21 A | 2006-12-21 A | 79 | 100% |  | 2006-12-21 | 2006-12-21 | 1d |  | John | 8h | 8h |
| 81 | 1.1.1.3.4.2.4 | Submit to BAH (Task 2.1) | milestone | 0d | 2006-12-21 A | 2006-12-21 A | 80 | 100% |  | 2006-12-21 | 2006-12-21 | 0d |  | Edmond |  |  |
| 82 | 1.1.1.3.4.3 | **Create AE** |  | 8d | 2006-12-12 A | 2006-12-21 A |  | 100% |  | 2006-12-12 | 2006-12-21 | 8d |  |  | 128h | 128h |
| 83 | 1.1.1.3.4.3.1 | Developer draft |  | 5d | 2006-12-12 A | 2006-12-18 A |  | 100% |  | 2006-12-12 | 2006-12-18 | 5d |  | Rhett | 40h | 40h |
| 84 | 1.1.1.3.4.3.2 | Adopters/Collaborators Review |  | 2d | 2006-12-19 A | 2006-12-20 A | 83 | 100% |  | 2006-12-19 | 2006-12-20 | 2d |  | Mayo; WF; AE_SIG; VCDE_WS; Arch_WS | 80h | 80h |
| 85 | 1.1.1.3.4.3.3 | Developers Update |  | 1d | 2006-12-21 A | 2006-12-21 A | 84 | 100% |  | 2006-12-21 | 2006-12-21 | 1d |  | John | 8h | 8h |
| 86 | 1.1.1.3.4.3.4 | Submit to BAH (Task 2.1) | milestone | 0d | 2006-12-21 A | 2006-12-21 A | 85 | 100% |  | 2006-12-21 | 2006-12-21 | 0d |  | Edmond |  |  |
| 87 | 1.1.1.3.4.4 | **Login** |  | 7d | 2006-12-12 A | 2006-12-20 A |  | 100% |  | 2006-12-12 | 2006-12-20 | 7d |  |  | 128h | 128h |
| 88 | 1.1.1.3.4.4.1 | Developer draft |  | 5d | 2006-12-12 A | 2006-12-18 A |  | 100% |  | 2006-12-12 | 2006-12-18 | 5d |  | Padmaja; Sujith | 80h | 80h |
| 89 | 1.1.1.3.4.4.2 | Adopters/Collaborators Review |  | 1d | 2006-12-19 A | 2006-12-19 A | 88 | 100% |  | 2006-12-19 | 2006-12-19 | 1d |  | Mayo; WF; AE_SIG; VCDE_WS; Arch_WS | 40h | 40h |
| 90 | 1.1.1.3.4.4.3 | Developers Update |  | 1d | 2006-12-20 A | 2006-12-20 A | 89 | 100% |  | 2006-12-20 | 2006-12-20 | 1d |  | John | 8h | 8h |
| 91 | 1.1.1.3.4.4.4 | Submit to BAH (Task 2.1) | milestone | 0d | 2006-12-20 A | 2006-12-20 A | 90 | 100% |  | 2006-12-20 | 2006-12-20 | 0d |  | Edmond |  |  |
| 92 | 1.1.1.3.5 | **SRS document (Task 2.2)** |  | 11d | 2006-12-14 A | 2006-12-29 A | 71SS+2d | 100% |  | 2006-12-14 | 2006-12-29 | 11d |  |  | 328h | 328h |
| 93 | 1.1.1.3.5.1 | Developer draft |  | 5d | 2006-12-14 A | 2006-12-20 A |  | 100% |  | 2006-12-14 | 2006-12-20 | 5d |  | John; Vinay; Rhett | 120h | 120h |
| 94 | 1.1.1.3.5.2 | Adopter review |  | 5d | 2006-12-21 A | 2006-12-28 A | 93 | 100% |  | 2006-12-21 | 2006-12-28 | 5d |  | Mayo; WF; AE_SIG; VCDE_WS; Arch_WS | 200h | 200h |
| 95 | 1.1.1.3.5.3 | Developer update |  | 1d | 2006-12-29 A | 2006-12-29 A | 94 | 100% |  | 2006-12-29 | 2006-12-29 | 1d |  | John | 8h | 8h |
| 96 | 1.1.1.3.5.4 | Deliver SRS document to BAH (Task 2.2) | milestone | 0d | 2006-12-29 A | 2006-12-29 A | 95 | 100% |  | 2006-12-29 | 2006-12-29 | 0d |  | Edmond |  |  |
| 97 | 1.1.1.4 | **Analysis and Design** |  | 10d | 2006-12-18 A | 2007-01-02 | 70SS+5d | 95% | 0.47d | 2006-12-18 | 2007-01-02 | 10d | 193d |  | 1488h | 1452h |
| 98 | 1.1.1.4.1 | **Design Documents (Task 2.4)** |  | 8d | 2006-12-18 A | 2006-12-28 A |  | 100% |  | 2006-12-18 | 2006-12-28 | 8d |  |  | 936h | 936h |
| 99 | 1.1.1.4.1.1 | **Create Study/Protocol Design Documents** |  | 8d | 2006-12-18 A | 2006-12-28 A |  | 100% |  | 2006-12-18 | 2006-12-28 | 8d |  |  | 256h | 256h |
| 100 | 1.1.1.4.1.1.1 | Develop appropriate UML Artifacts |  | 5d | 2006-12-18 A | 2006-12-22 A |  | 100% |  | 2006-12-18 | 2006-12-22 | 5d |  | Padmaja; Sujith | 80h | 80h |
| 101 | 1.1.1.4.1.1.2 | Developer draft |  | 5d | 2006-12-18 A | 2006-12-22 A |  | 100% |  | 2006-12-18 | 2006-12-22 | 5d |  | Padmaja; Sujith | 80h | 80h |
| 102 | 1.1.1.4.1.1.3 | Adopters/Collaborators Review |  | 2d | 2006-12-26 A | 2006-12-27 A | 101 | 100% |  | 2006-12-26 | 2006-12-27 | 2d |  | Mayo; WF; AE_SIG; VCDE_WS; Arch_WS | 80h | 80h |
| 103 | 1.1.1.4.1.1.4 | Developers Update |  | 1d | 2006-12-28 A | 2006-12-28 A | 102 | 100% |  | 2006-12-28 | 2006-12-28 | 1d |  | Padmaja; Sujith | 16h | 16h |
| 104 | 1.1.1.4.1.1.5 | Submit to BAH (Task 2.3 and 2.4) | milestone | 0d | 2006-12-28 A | 2006-12-28 A | 103 | 100% |  | 2006-12-28 | 2006-12-28 | 0d |  | Edmond |  |  |

| ID | WBS | Task | Type | Duration | Start | Finish | Predecessors | Complete | Baseline start | Baseline finish | Baseline duration | Resources | Work | Actual work |
| --- | --- | --- | --- | --- | --- | --- | --- | --- | --- | --- | --- | --- | --- | --- |
| 105 | 1.1.1.4.1.2 | **Create Participant Design Documents** |  | 8d | 2006-12-18 A | 2006-12-28 A |  | 100% | 2006-12-18 | 2006-12-28 | 8d |  | 168h | 168h |
| 106 | 1.1.1.4.1.2.1 | Develop appropriate UML Artifacts |  | 5d | 2006-12-18 A | 2006-12-22 A |  | 100% | 2006-12-18 | 2006-12-22 | 5d | Krikor | 40h | 40h |
| 107 | 1.1.1.4.1.2.2 | Developer draft |  | 5d | 2006-12-18 A | 2006-12-22 A |  | 100% | 2006-12-18 | 2006-12-22 | 5d | Krikor | 40h | 40h |
| 108 | 1.1.1.4.1.2.3 | Adopters/Collaborators Review |  | 2d | 2006-12-26 A | 2006-12-27 A | 107 | 100% | 2006-12-26 | 2006-12-27 | 2d | Mayo; WF; AE_SIG; VCDE_WS; Arch_WS | 80h | 80h |
| 109 | 1.1.1.4.1.2.4 | Developers Update |  | 1d | 2006-12-28 A | 2006-12-28 A | 108 | 100% | 2006-12-28 | 2006-12-28 | 1d | Krikor | 8h | 8h |
| 110 | 1.1.1.4.1.2.5 | Submit to BAH (Task 2.3 and 2.4) | milestone | 0d | 2006-12-28 A | 2006-12-28 A | 109 | 100% | 2006-12-28 | 2006-12-28 | 0d | Edmond |  |  |
| 111 | 1.1.1.4.1.3 | **Create AE Design Documents** |  | 8d | 2006-12-18 A | 2006-12-28 A |  | 100% | 2006-12-18 | 2006-12-28 | 8d |  | 168h | 168h |
| 112 | 1.1.1.4.1.3.1 | Develop appropriate UML Artifacts |  | 5d | 2006-12-18 A | 2006-12-22 A |  | 100% | 2006-12-18 | 2006-12-22 | 5d | Rhett | 40h | 40h |
| 113 | 1.1.1.4.1.3.2 | Developer draft |  | 5d | 2006-12-18 A | 2006-12-22 A |  | 100% | 2006-12-18 | 2006-12-22 | 5d | Rhett | 40h | 40h |
| 114 | 1.1.1.4.1.3.3 | Adopters/Collaborators Review |  | 2d | 2006-12-26 A | 2006-12-27 A | 113 | 100% | 2006-12-26 | 2006-12-27 | 2d | Mayo; WF; AE_SIG; VCDE_WS; Arch_WS | 80h | 80h |
| 115 | 1.1.1.4.1.3.4 | Developers Update |  | 1d | 2006-12-28 A | 2006-12-28 A | 114 | 100% | 2006-12-28 | 2006-12-28 | 1d | Rhett | 8h | 8h |
| 116 | 1.1.1.4.1.3.5 | Submit to BAH (Task 2.3 and 2.4) | milestone | 0d | 2006-12-28 A | 2006-12-28 A | 115 | 100% | 2006-12-28 | 2006-12-28 | 0d | Edmond |  |  |
| 117 | 1.1.1.4.1.4 | **Login Design Documents** |  | 8d | 2006-12-18 A | 2006-12-28 A |  | 100% | 2006-12-18 | 2006-12-28 | 8d |  | 216h | 216h |
| 118 | 1.1.1.4.1.4.1 | Develop appropriate UML Artifacts |  | 5d | 2006-12-18 A | 2006-12-22 A |  | 100% | 2006-12-18 | 2006-12-22 | 5d | Rhett | 40h | 40h |
| 119 | 1.1.1.4.1.4.2 | Developer draft |  | 5d | 2006-12-18 A | 2006-12-22 A |  | 100% | 2006-12-18 | 2006-12-22 | 5d | Padmaja; Sujith | 80h | 80h |
| 120 | 1.1.1.4.1.4.3 | Adopters/Collaborators Review |  | 2d | 2006-12-26 A | 2006-12-27 A | 119 | 100% | 2006-12-26 | 2006-12-27 | 2d | Mayo; WF; AE_SIG; VCDE_WS; Arch_WS | 80h | 80h |
| 121 | 1.1.1.4.1.4.4 | Developers Update |  | 1d | 2006-12-28 A | 2006-12-28 A | 120 | 100% | 2006-12-28 | 2006-12-28 | 1d | Padmaja; Sujith | 16h | 16h |
| 122 | 1.1.1.4.1.4.5 | Submit to BAH (Task 2.3 and 2.4) | milestone | 0d | 2006-12-28 A | 2006-12-28 A | 121 | 100% | 2006-12-28 | 2006-12-28 | 0d | Edmond |  |  |
| 123 | 1.1.1.4.1.5 | **UI/Mockups Design Documents** |  | 8d | 2006-12-18 A | 2006-12-28 A |  | 100% | 2006-12-18 | 2006-12-28 | 8d |  | 128h | 128h |
| 124 | 1.1.1.4.1.5.1 | Developer Draft |  | 5d | 2006-12-18 A | 2006-12-22 A |  | 100% | 2006-12-18 | 2006-12-22 | 5d | Richard | 40h | 40h |
| 125 | 1.1.1.4.1.5.2 | Adopters/Collaborators Review |  | 2d | 2006-12-26 A | 2006-12-27 A | 124 | 100% | 2006-12-26 | 2006-12-27 | 2d | Mayo; WF; AE_SIG; VCDE_WS; Arch_WS | 80h | 80h |
| 126 | 1.1.1.4.1.5.3 | Developers Update |  | 1d | 2006-12-28 A | 2006-12-28 A | 125 | 100% | 2006-12-28 | 2006-12-28 | 1d | Richard | 8h | 8h |
| 127 | 1.1.1.4.1.5.4 | Submit to BAH (Task 2.4) | milestone | 0d | 2006-12-28 A | 2006-12-28 A | 126 | 100% | 2006-12-28 | 2006-12-28 | 0d | Edmond |  |  |
| 128 | 1.1.1.4.2 | **ESB** |  | 7d | 2006-12-18 A | 2006-12-27 A |  | 100% | 2006-12-18 | 2006-12-27 | 7d |  | 112h | 112h |
| 129 | 1.1.1.4.2.1 | Evalutate technologies by prototyping |  | 7d | 2006-12-18 A | 2006-12-27 A |  | 100% | 2006-12-18 | 2006-12-27 | 7d | Vinay; Joshua | 112h | 112h |

| ID | WBS | Task | Duration | Start | Finish | Predecessors | Complete | Remaining | Baseline start | Baseline finish | Baseline duration | Total slack | Free slack | Resources | Work | Actual work |
| --- | --- | --- | --- | --- | --- | --- | --- | --- | --- | --- | --- | --- | --- | --- | --- | --- |
| 130 | 1.1.1.4.3 | **Grid service** | 7d | 2006-12-18 A | 2006-12-27 A |  | 100% |  | 2006-12-18 | 2006-12-27 | 7d |  |  |  | 112h | 112h |
| 131 | 1.1.1.4.3.1 | Evaluate caGrid 1.0 service infrastructure | 7d | 2006-12-18 A | 2006-12-27 A |  | 100% |  | 2006-12-18 | 2006-12-27 | 7d |  |  | Vinay; Joshua | 112h | 112h |
| 132 | 1.1.1.4.4 | **Database** | 3d | 2006-12-18 A | 2006-12-20 A |  | 100% |  | 2006-12-18 | 2006-12-20 | 3d |  |  |  | 96h | 96h |
| 133 | 1.1.1.4.4.1 | First draft of database structure | 3d | 2006-12-18 A | 2006-12-20 A |  | 100% |  | 2006-12-18 | 2006-12-20 | 3d |  |  | Rhett; Padmaja; Sujith; Krikor | 96h | 96h |
| 134 | 1.1.1.4.5 | **Domain model** | 9d | 2006-12-18 A | 2006-12-29 |  | 50% | 4.5d | 2006-12-18 | 2006-12-29 | 9d | 194d |  |  | 72h | 36h |
| 135 | 1.1.1.4.5.1 | Create model harmonized with BRIDG | 5d | 2006-12-18 A | 2006-12-22 |  | 50% | 2.5d | 2006-12-18 | 2006-12-22 | 5d | 194d | 0d | John | 40h | 20h |
| 136 | 1.1.1.4.5.2 | Create first draft of model | 4d | 2006-12-26 A | 2006-12-29 | 135 | 50% | 2d | 2006-12-26 | 2006-12-29 | 4d | 192d |  | John | 32h | 16h |
| 137 | 1.1.1.4.6 | **Security** | 10d | 2006-12-18 A | 2007-01-02 A |  | 100% |  | 2006-12-18 | 2007-01-02 | 10d |  |  |  | 160h | 160h |
| 138 | 1.1.1.4.6.1 | Evaluate caGrid 1.0 security infrastructure | 10d | 2006-12-18 A | 2007-01-02 A | 70 | 100% |  | 2006-12-18 | 2007-01-02 | 10d |  |  | Vinay; Joshua | 160h | 160h |
| 139 | 1.1.1.5 | **Implementation** | 5d | 2006-12-19 A | 2006-12-26 A | 97SS+1d | 100% |  | 2006-12-19 | 2006-12-26 | 5d |  |  |  | 1280h | 1280h |
| 140 | 1.1.1.5.1 | **Enterprise Service Bus** | 5d | 2006-12-19 A | 2006-12-26 A |  | 100% |  | 2006-12-19 | 2006-12-26 | 5d |  |  |  | 80h | 80h |
| 141 | 1.1.1.5.1.1 | Setup initial project | 5d | 2006-12-19 A | 2006-12-26 A |  | 100% |  | 2006-12-19 | 2006-12-26 | 5d |  |  | Vinay; Joshua | 80h | 80h |
| 142 | 1.1.1.5.2 | **Grid service** | 5d | 2006-12-19 A | 2006-12-26 A |  | 100% |  | 2006-12-19 | 2006-12-26 | 5d |  |  |  | 80h | 80h |
| 143 | 1.1.1.5.2.1 | Create grid service skeleton | 5d | 2006-12-19 A | 2006-12-26 A |  | 100% |  | 2006-12-19 | 2006-12-26 | 5d |  |  | Vinay; Joshua | 80h | 80h |
| 144 | 1.1.1.5.3 | **Create Study/Protocol** | 5d | 2006-12-19 A | 2006-12-26 A |  | 100% |  | 2006-12-19 | 2006-12-26 | 5d |  |  |  | 640h | 640h |
| 145 | 1.1.1.5.3.1 | Implement O/R mapping | 5d | 2006-12-19 A | 2006-12-26 A |  | 100% |  | 2006-12-19 | 2006-12-26 | 5d |  |  | Padmaja; Sujith | 80h | 80h |
| 146 | 1.1.1.5.3.2 | Develop StudyDAO | 5d | 2006-12-19 A | 2006-12-26 A |  | 100% |  | 2006-12-19 | 2006-12-26 | 5d |  |  | Padmaja; Sujith | 80h | 80h |
| 147 | 1.1.1.5.3.3 | Develop StudyService | 5d | 2006-12-19 A | 2006-12-26 A |  | 100% |  | 2006-12-19 | 2006-12-26 | 5d |  |  | Padmaja; Sujith | 80h | 80h |
| 148 | 1.1.1.5.3.4 | Develop controller and command objects | 5d | 2006-12-19 A | 2006-12-26 A |  | 100% |  | 2006-12-19 | 2006-12-26 | 5d |  |  | Padmaja; Sujith | 80h | 80h |
| 149 | 1.1.1.5.3.5 | Develop UI | 5d | 2006-12-19 A | 2006-12-26 A |  | 100% |  | 2006-12-19 | 2006-12-26 | 5d |  |  | Padmaja; Sujith | 80h | 80h |
| 150 | 1.1.1.5.3.6 | Develop JUnit test cases | 5d | 2006-12-19 A | 2006-12-26 A |  | 100% |  | 2006-12-19 | 2006-12-26 | 5d |  |  | Padmaja; Sujith | 80h | 80h |
| 151 | 1.1.1.5.3.7 | Develop | 5d | 2006-12-19 A | 2006-12-26 A |  | 100% |  | 2006-12-19 | 2006-12-26 | 5d |  |  | Padmaja; Sujith | 80h | 80h |
| 152 | 1.1.1.5.3.8 | Login | 5d | 2006-12-19 A | 2006-12-26 A |  | 100% |  | 2006-12-19 | 2006-12-26 | 5d |  |  | Padmaja; Sujith | 80h | 80h |
| 153 | 1.1.1.5.4 | **Create Participant** | 5d | 2006-12-19 A | 2006-12-26 A |  | 100% |  | 2006-12-19 | 2006-12-26 | 5d |  |  |  | 240h | 240h |
| 154 | 1.1.1.5.4.1 | Implement O/R mapping | 5d | 2006-12-19 A | 2006-12-26 A |  | 100% |  | 2006-12-19 | 2006-12-26 | 5d |  |  | Krikor | 40h | 40h |
| 155 | 1.1.1.5.4.2 | Develop ParticipantDAO | 5d | 2006-12-19 A | 2006-12-26 A |  | 100% |  | 2006-12-19 | 2006-12-26 | 5d |  |  | Krikor | 40h | 40h |
| 156 | 1.1.1.5.4.3 | Develop ParticipantService | 5d | 2006-12-19 A | 2006-12-26 A |  | 100% |  | 2006-12-19 | 2006-12-26 | 5d |  |  | Krikor | 40h | 40h |
| 157 | 1.1.1.5.4.4 | Develop controller and command objects | 5d | 2006-12-19 A | 2006-12-26 A |  | 100% |  | 2006-12-19 | 2006-12-26 | 5d |  |  | Krikor | 40h | 40h |
| 158 | 1.1.1.5.4.5 | Develop UI | 5d | 2006-12-19 A | 2006-12-26 A |  | 100% |  | 2006-12-19 | 2006-12-26 | 5d |  |  | Krikor | 40h | 40h |
| 159 | 1.1.1.5.4.6 | Develop JUnit test cases | 5d | 2006-12-19 A | 2006-12-26 A |  | 100% |  | 2006-12-19 | 2006-12-26 | 5d |  |  | Krikor | 40h | 40h |

| ID | WBS | Task | Type | Duration | Start | Finish | Predecessors | Complete | Remaining | Baseline start | Baseline finish | Baseline duration | Total slack | Free slack | Constraint | Resources | Work | Actual work |
| --- | --- | --- | --- | --- | --- | --- | --- | --- | --- | --- | --- | --- | --- | --- | --- | --- | --- | --- |
| 160 | 1.1.1.5.5 | **Create AE** |  | 5d | 2006-12-19 A | 2006-12-26 A |  | 100% |  | 2006-12-19 | 2006-12-26 | 5d |  |  |  |  | 240h | 240h |
| 161 | 1.1.1.5.5.1 | Implement O/R mapping |  | 5d | 2006-12-19 A | 2006-12-26 A |  | 100% |  | 2006-12-19 | 2006-12-26 | 5d |  |  |  | Rhett | 40h | 40h |
| 162 | 1.1.1.5.5.2 | Develop AdverseEventDAO |  | 5d | 2006-12-19 A | 2006-12-26 A |  | 100% |  | 2006-12-19 | 2006-12-26 | 5d |  |  |  | Rhett | 40h | 40h |
| 163 | 1.1.1.5.5.3 | Develop AdverseEventService |  | 5d | 2006-12-19 A | 2006-12-26 A |  | 100% |  | 2006-12-19 | 2006-12-26 | 5d |  |  |  | Rhett | 40h | 40h |
| 164 | 1.1.1.5.5.4 | Develop controller and command objects |  | 5d | 2006-12-19 A | 2006-12-26 A |  | 100% |  | 2006-12-19 | 2006-12-26 | 5d |  |  |  | Rhett | 40h | 40h |
| 165 | 1.1.1.5.5.5 | Develop UI |  | 5d | 2006-12-19 A | 2006-12-26 A |  | 100% |  | 2006-12-19 | 2006-12-26 | 5d |  |  |  | Rhett | 40h | 40h |
| 166 | 1.1.1.5.5.6 | Develop JUnit test cases |  | 5d | 2006-12-19 A | 2006-12-26 A |  | 100% |  | 2006-12-19 | 2006-12-26 | 5d |  |  |  | Rhett | 40h | 40h |
| 167 | 1.1.1.6 | **Testing** |  | 8d | 2006-12-19 A | 2006-12-29 |  | 22% | 6.25d | 2006-12-19 | 2006-12-29 | 8d | 194d |  |  |  | 1080.24h | 242.06h |
| 168 | 1.1.1.6.1 | **Create Functional Tests** |  | 6d | 2006-12-19 A | 2006-12-27 | 71SS+5d | 25% | 4.5d | 2006-12-19 | 2006-12-27 | 6d | 196d |  |  |  | 968.24h | 242.06h |
| 169 | 1.1.1.6.1.1 | Create Study |  | 5d | 2006-12-19 A | 2006-12-26 |  | 25% | 3.75d | 2006-12-19 | 2006-12-26 | 5d | 195d |  |  | Renee; David; Brenda; Natasha; Mayo; WF | 240.24h | 60.06h |
| 170 | 1.1.1.6.1.2 | Create Participant |  | 5d | 2006-12-19 A | 2006-12-26 |  | 25% | 3.75d | 2006-12-19 | 2006-12-26 | 5d | 195d |  |  | Renee; David; Brenda; Natasha; Mayo; WF | 240h | 60h |
| 171 | 1.1.1.6.1.3 | Login |  | 5d | 2006-12-19 A | 2006-12-26 |  | 25% | 3.75d | 2006-12-19 | 2006-12-26 | 5d | 195d |  |  | Renee; David; Brenda; Natasha; Mayo; WF | 240h | 60h |
| 172 | 1.1.1.6.1.4 | Create AE |  | 5d | 2006-12-19 A | 2006-12-26 |  | 25% | 3.75d | 2006-12-19 | 2006-12-26 | 5d | 194.25d | 0d |  | Renee; David; Brenda; Natasha; Mayo; WF | 240h | 60h |
| 173 | 1.1.1.6.1.5 | RTM |  | 1d | 2006-12-27 A | 2006-12-27 | 172, 93 | 25% | 0.75d | 2006-12-27 | 2006-12-27 | 1d | 194d |  |  | John | 8h | 2h |
| 174 | 1.1.1.6.2 | **Final Tests of Iteration** |  | 3d | 2006-12-27 | 2006-12-29 |  |  |  | 2006-12-27 | 2006-12-29 | 3d | 175.49d |  |  |  | 112h |  |
| 175 | 1.1.1.6.2.1 | Deploy Prototype (Task 2.5) |  | 1d | 2006-12-27 | 2006-12-27 | 139 |  |  | 2006-12-27 | 2006-12-27 | 1d | 159.58d | 0d |  | Joshua; Rhett | 16h |  |
| 176 | 1.1.1.6.2.2 | Validation and Acceptance Testing |  | 2d | 2006-12-28 | 2006-12-29 | 175 |  |  | 2006-12-28 | 2006-12-29 | 2d | 159.58d | 0d |  | Renee; David; Brenda; Natasha; Mayo; WF | 96h |  |
| 177 | 1.1.1.6.2.3 | Submit Test Results Report (Task 2.7) | milestone | 0d | 2006-12-29 | 2006-12-29 | 176 |  |  | 2006-12-29 | 2006-12-29 | 0d | 159.58d | 0d |  |  |  |  |
| 178 | 1.1.2 | **Iteration 2** |  | 46d | 2006-12-18 A | 2007-02-21 | 177 | 60% | 18.51d | 2007-01-02 | 2007-02-01 | 23d | 157d |  |  |  | 5240h | 2972h |
| 179 | 1.1.2.1 | Start Iteration 2 | milestone | 0d | 2007-01-02 | 2007-01-02 |  |  |  |  |  |  | 168.11d | 0d | start no earlier than 2007-01-02 |  |  |  |
| 180 | 1.1.2.2 | **Project Management** |  | 43d | 2006-12-18 A | 2007-02-16 | 179SS | 28% | 30.89d | 2007-01-02 | 2007-02-01 | 23d | 160d |  |  |  | 1088h | 274h |
| 181 | 1.1.2.2.1 | Update Project Plan |  | 5d | 2007-01-02 A | 2007-01-08 A |  | 100% |  | 2007-01-02 | 2007-01-08 | 5d |  |  |  | Edmond | 40h | 40h |
| 182 | 1.1.2.2.2 | **Detailed Construction and Transition Plan** |  | 20d | 2007-01-22 A | 2007-02-16 |  | 4% | 19.17d | 2007-01-22 | 2007-02-01 | 9d | 160d |  |  |  | 480h | 50h |
| 183 | 1.1.2.2.2.1 | Prepare Detailed Plan for Construction and Transition Phases |  | 5d | 2007-01-22 A | 2007-01-26 |  | 25% | 3.75d | 2007-01-22 | 2007-01-26 | 5d | 165d | 0d | start no earlier than 2007-01-22 | Edmond; Ram; Vinay; Warren; Cal | 200h | 50h |
| 184 | 1.1.2.2.2.2 | Deliver Plan to BAH (Task 2.9) | milestone | 0d | 2007-01-26 | 2007-01-26 | 183 |  |  | 2007-02-01 | 2007-02-01 | 0d | 165d | 0d |  | Edmond |  |  |
| 185 | 1.1.2.2.2.3 | Adopter Review |  | 10d | 2007-01-29 | 2007-02-09 | 184 |  |  |  |  |  | 170d |  |  | Mayo; WF | 160h |  |
| 186 | 1.1.2.2.2.4 | Formal Review by BAH |  | 15d | 2007-01-29 | 2007-02-16 | 184 |  |  |  |  |  | 165d |  |  | BAH | 120h |  |

| ID | WBS | Task | Type | Duration | Start | Finish | Predecessors | Complete | Remaining | Baseline start | Baseline finish | Baseline duration | Total slack | Free slack | Constraint | Resources | Work | Actual work |
| --- | --- | --- | --- | --- | --- | --- | --- | --- | --- | --- | --- | --- | --- | --- | --- | --- | --- | --- |
| 187 | 1.1.2.2.3 | **Change Control Board Plan and Charter (Task 2.10)** |  | 32.75d | 2006-12-18 A | 2007-02-02 |  | 17% | 27.29d | 2006-12-18 | 2007-01-03 | 11d | 170.25d |  |  |  | 400h | 40h |
| 188 | 1.1.2.2.3.1 | Prepare CCB Charter |  | 10d | 2006-12-18 A | 2007-01-12 |  | 50% | 5d | 2006-12-18 | 2006-12-22 | 5d | 175.25d | 0d | start no earlier than 2006-12-18 | Edmond | 80h | 40h |
| 189 | 1.1.2.2.3.2 | Submit to BAH | milestone | 0d | 2007-01-12 | 2007-01-12 | 188 |  |  | 2007-01-03 | 2007-01-03 | 0d | 175.25d | 0d |  | Edmond |  |  |
| 190 | 1.1.2.2.3.3 | Adopters/Collobators Review |  | 5d | 2007-01-12 | 2007-01-19 | 189 |  |  | 2006-12-26 | 2007-01-02 | 5d | 185.25d |  |  | Mayo; WF; AE_SIG; VCDE_WS; Arch_WS | 200h |  |
| 191 | 1.1.2.2.3.4 | Formal Review by BAH |  | 15d | 2007-01-12 | 2007-02-02 | 189 |  |  |  |  |  | 175.25d | 0d |  | BAH | 120h |  |
| 192 | 1.1.2.2.4 | **CaAERS CCB (Task 2.10)** |  | 0d | 2007-02-02 | 2007-02-02 |  |  |  | 2007-01-10 | 2007-01-24 | 11d | 170.25d |  |  |  |  |  |
| 193 | 1.1.2.2.4.1 | CCB Meetings | milestone | 0d | 2007-02-02 | 2007-02-02 | 191 |  |  | 2007-01-24 | 2007-01-24 | 1d | 175.25d |  | start no earlier than 2007-01-24 | CCB |  |  |
| 194 | 1.1.2.2.5 | **Weekly Team/Developers Meeting** |  | 16d | 2007-01-08 A | 2007-01-29 A |  | 100% |  | 2007-01-08 | 2007-01-29 | 16d |  |  |  |  | 96h | 96h |
| 195 | 1.1.2.2.5.1 | Weekly Team Meeting 1 |  | 1d | 2007-01-08 A | 2007-01-08 A |  | 100% |  | 2007-01-08 | 2007-01-08 | 1d |  |  | start no earlier than 2007-01-08 | Edmond; Vinay; Functional Team Lead | 24h | 24h |
| 196 | 1.1.2.2.5.2 | Weekly Team Meeting 2 |  | 1d | 2007-01-15 A | 2007-01-15 A |  | 100% |  | 2007-01-15 | 2007-01-15 | 1d |  |  | start no earlier than 2007-01-15 | Edmond; Vinay; Functional Team Lead | 24h | 24h |
| 197 | 1.1.2.2.5.3 | Weekly Team Meeting 3 |  | 1d | 2007-01-22 A | 2007-01-22 A |  | 100% |  | 2007-01-22 | 2007-01-22 | 1d |  |  | start no earlier than 2007-01-22 | Edmond; Vinay; Functional Team Lead | 24h | 24h |
| 198 | 1.1.2.2.5.4 | Weekly Team Meeting 4 |  | 1d | 2007-01-29 A | 2007-01-29 A |  | 100% |  | 2007-01-29 | 2007-01-29 | 1d |  |  | start no earlier than 2007-01-29 | Edmond; Vinay; Functional Team Lead | 24h | 24h |
| 199 | 1.1.2.2.6 | **Status and Risk Reporting** |  | 14d | 2007-01-12 A | 2007-01-31 |  | 57% | 6d | 2007-01-12 | 2007-01-31 | 14d | 172d |  |  |  | 72h | 48h |
| 200 | 1.1.2.2.6.1 | Bi-weekly Risk Update in caMP (Task 1.4) |  | 1d | 2007-01-12 A | 2007-01-12 A |  | 100% |  | 2007-01-12 | 2007-01-12 | 1d |  |  | start no earlier than 2007-01-12 | Edmond | 8h | 8h |
| 201 | 1.1.2.2.6.2 | Bi-weekly Risk Matrix Update Meeting |  | 1d | 2007-01-12 A | 2007-01-12 A |  | 100% |  | 2007-01-12 | 2007-01-12 | 1d |  |  | start no earlier than 2007-01-12 | Edmond | 8h | 8h |
| 202 | 1.1.2.2.6.3 | Bi-weekly Risk Update in caMP (Task 1.4) |  | 1d | 2007-01-26 A | 2007-01-26 A |  | 100% |  | 2007-01-26 | 2007-01-26 | 1d |  |  | start no earlier than 2007-01-26 | Edmond | 8h | 8h |
| 203 | 1.1.2.2.6.4 | Bi-weekly Status Update Meeting with BAH/NCI |  | 1d | 2007-01-26 A | 2007-01-26 A |  | 100% |  | 2007-01-26 | 2007-01-26 | 1d |  |  | start no earlier than 2007-01-26 | Edmond; Ram; Vinay | 24h | 24h |
| 204 | 1.1.2.2.6.5 | Monthly Status Report (Task 1.3) |  | 1d | 2007-01-31 | 2007-01-31 |  |  |  | 2007-01-31 | 2007-01-31 | 1d | 177d |  | start no earlier than 2007-01-31 | Edmond | 8h |  |
| 205 | 1.1.2.2.6.6 | Monthly Risk Matrix Update (Task 1.3) |  | 1d | 2007-01-31 | 2007-01-31 |  |  |  | 2007-01-31 | 2007-01-31 | 1d | 177d |  | start no earlier than 2007-01-31 | Edmond | 8h |  |
| 206 | 1.1.2.2.6.7 | Adopters Collaboration Report (Task 1.7) |  | 1d | 2007-01-31 | 2007-01-31 |  |  |  | 2007-01-31 | 2007-01-31 | 1d | 177d |  | start no earlier than 2007-01-31 | Edmond | 8h |  |
| 207 | 1.1.2.2.7 | **Collaboration Management Activities** |  | 11d | 2007-01-11 A | 2007-01-25 A |  | 100% |  | 2007-01-11 | 2007-01-25 | 11d |  |  |  |  |  |  |
| 208 | 1.1.2.2.7.1 | Bi-Weekly AE SIG Meeting |  | 1d | 2007-01-11 A | 2007-01-11 A |  | 100% |  | 2007-01-11 | 2007-01-11 | 1d |  |  | start no earlier than 2007-01-11 |  |  |  |
| 209 | 1.1.2.2.7.2 | Adopters Mtg |  | 1d | 2007-01-18 A | 2007-01-18 A |  | 100% |  |  |  |  |  |  | start no earlier than 2007-01-18 |  |  |  |
| 210 | 1.1.2.2.7.3 | Bi-Weekly AE SIG Meeting |  | 1d | 2007-01-25 A | 2007-01-25 A |  | 100% |  | 2007-01-25 | 2007-01-25 | 1d |  |  | start no earlier than 2007-01-25 |  |  |  |

| ID | WBS | Task | Type | Duration | Start | Finish | Predecessors | Complete | Remaining | Baseline start | Baseline finish | Baseline duration | Total slack | Free slack | Constraint | Resources | Work | Actual work |
| --- | --- | --- | --- | --- | --- | --- | --- | --- | --- | --- | --- | --- | --- | --- | --- | --- | --- | --- |
| 211 | 1.1.2.3 | **Requirements** |  | 32d | 2007-01-02 A | 2007-02-14 |  | 74% | 8.29d | 2007-01-02 | 2007-01-23 | 16d | 162d |  |  |  | 1088h | 914h |
| 212 | 1.1.2.3.1 | Face-to-Face Meeting |  | 2d | 2007-01-04 A | 2007-01-05 A |  | 100% |  | 2007-01-04 | 2007-01-05 | 2d |  |  | must start on 2007-01-04 | Ram; Vinay; Warren; Cal; Renee; David; John; Rhett; Joshua | 144h | 144h |
| 213 | 1.1.2.3.2 | F2F Meeting Notes (Task 1.5) |  | 2d | 2007-01-08 A | 2007-01-09 A | 212 | 100% |  | 2007-01-08 | 2007-01-09 | 2d |  |  |  | Edmond | 16h | 16h |
| 214 | 1.1.2.3.3 | Use Case Selection |  | 2d | 2007-01-02 A | 2007-01-03 A |  | 100% |  | 2007-01-02 | 2007-01-03 | 2d |  |  |  | Ram; Vinay; Warren; Cal | 64h | 64h |
| 215 | 1.1.2.3.4 | Use Case Assignments for Iteration 2 |  | 1d | 2007-01-04 A | 2007-01-04 A | 214 | 100% |  | 2007-01-04 | 2007-01-04 | 1d |  |  |  | Vinay | 8h | 8h |
| 216 | 1.1.2.3.5 | **Use Case Specification and Realization (Task 2.1)** |  | 17d | 2007-01-02 A | 2007-01-24 |  | 98% | 0.28d | 2007-01-05 | 2007-01-12 | 6d | 177d | 0d |  |  | 600h | 594h |
| 217 | 1.1.2.3.5.1 | **Protocol Abstraction** |  | 14d | 2007-01-02 A | 2007-01-19 A |  | 100% |  |  |  |  |  |  |  |  | 192h | 192h |
| 218 | 1.1.2.3.5.1.1 | Developer draft |  | 5d | 2007-01-02 A | 2007-01-08 A |  | 100% |  |  |  |  |  |  |  | Sean; Krikor | 80h | 80h |
| 219 | 1.1.2.3.5.1.2 | Adopters/Collobators Review |  | 5d | 2007-01-09 A | 2007-01-15 A | 218 | 100% |  |  |  |  |  |  |  | Mayo; WF | 80h | 80h |
| 220 | 1.1.2.3.5.1.3 | Developer Update |  | 4d | 2007-01-16 A | 2007-01-19 A | 219 | 100% |  |  |  |  |  |  |  | Sean | 32h | 32h |
| 221 | 1.1.2.3.5.2 | **AE Data Collection** |  | 14d | 2007-01-02 A | 2007-01-19 A |  | 100% |  |  |  |  |  |  |  |  | 192h | 192h |
| 222 | 1.1.2.3.5.2.1 | Developer draft |  | 5d | 2007-01-02 A | 2007-01-08 A |  | 100% |  |  |  |  |  |  |  | Sean; Rhett | 80h | 80h |
| 223 | 1.1.2.3.5.2.2 | Adopters/Collobators Review |  | 5d | 2007-01-09 A | 2007-01-15 A | 222 | 100% |  |  |  |  |  |  |  | Mayo; WF | 80h | 80h |
| 224 | 1.1.2.3.5.2.3 | Developer Update |  | 4d | 2007-01-16 A | 2007-01-19 A | 223 | 100% |  |  |  |  |  |  |  | Sean | 32h | 32h |
| 225 | 1.1.2.3.5.3 | **Triggers/Notification** |  | 14d | 2007-01-02 A | 2007-01-19 A |  | 100% |  |  |  |  |  |  |  |  | 192h | 192h |
| 226 | 1.1.2.3.5.3.1 | Developer draft |  | 5d | 2007-01-02 A | 2007-01-08 A |  | 100% |  |  |  |  |  |  |  | Sean; Rhett | 80h | 80h |
| 227 | 1.1.2.3.5.3.2 | Adopters/Collobators Review |  | 5d | 2007-01-09 A | 2007-01-15 A | 226 | 100% |  |  |  |  |  |  |  | Mayo; WF | 80h | 80h |
| 228 | 1.1.2.3.5.3.3 | Developer Update |  | 4d | 2007-01-16 A | 2007-01-19 A | 227 | 100% |  |  |  |  |  |  |  | Sean | 32h | 32h |
| 229 | 1.1.2.3.5.4 | Update Use Case Document |  | 3d | 2007-01-22 A | 2007-01-24 | 220, 224, 228 | 75% | 0.75d |  |  |  | 182d | 0d |  | Sean | 24h | 18h |
| 230 | 1.1.2.3.5.5 | Submit Updated Use Case Document to BAH (Task 2.1) | milestone | 0d | 2007-01-24 | 2007-01-24 | 229 |  |  |  |  |  | 182d |  |  |  |  |  |
| 231 | 1.1.2.3.6 | **SRS document (Task 2.2)** |  | 32d | 2007-01-02 A | 2007-02-14 |  | 34% | 21d | 2007-01-09 | 2007-01-23 | 11d | 161d | 0d |  |  | 256h | 88h |
| 232 | 1.1.2.3.6.1 | Developer draft |  | 5d | 2007-01-02 A | 2007-01-08 A |  | 100% |  | 2007-01-09 | 2007-01-15 | 5d |  |  |  | Sean | 40h | 40h |
| 233 | 1.1.2.3.6.2 | Adopter review |  | 5d | 2007-01-09 A | 2007-01-15 | 232 | 50% | 2.5d | 2007-01-16 | 2007-01-22 | 5d | 169.5d | 0d |  | Sean | 40h | 20h |
| 234 | 1.1.2.3.6.3 | Developer update |  | 7d | 2007-01-16 A | 2007-01-24 | 233 | 50% | 3.5d | 2007-01-23 | 2007-01-23 | 1d | 166d | 0d |  | Sean | 56h | 28h |
| 235 | 1.1.2.3.6.4 | Deliver SRS document to BAH (Task 2.2) | milestone | 0d | 2007-01-24 | 2007-01-24 | 234 |  |  | 2007-01-23 | 2007-01-23 | 0d | 166d | 0d |  | Sean |  |  |
| 236 | 1.1.2.3.6.5 | Formal Review by BAH |  | 15d | 2007-01-25 | 2007-02-14 | 235 |  |  |  |  |  | 166d |  |  | BAH | 120h |  |

| ID | WBS | Task | Type | Duration | Start | Finish | Predecessors | Complete | Remaining | Baseline start | Baseline finish | Baseline duration | Total slack | Free slack | Resources | Work | Actual work |
| --- | --- | --- | --- | --- | --- | --- | --- | --- | --- | --- | --- | --- | --- | --- | --- | --- | --- |
| 237 | 1.1.2.4 | **Analysis and Design** |  | 37d | 2007-01-02 A | 2007-02-21 |  | 45% | 20.27d | 2007-01-12 | 2007-01-26 | 11d | 157d |  |  | 968h | 380h |
| 238 | 1.1.2.4.1 | **Design Documents** |  | 28d | 2007-01-09 A | 2007-02-15 | 216SS+5d | 64% | 10.11d | 2007-01-12 | 2007-01-23 | 8d | 161d |  |  | 432h | 276h |
| 239 | 1.1.2.4.1.1 | **Protocol Abstraction** |  | 13d | 2007-01-09 A | 2007-01-25 |  | 88% | 1.5d |  |  |  | 161d |  |  | 104h | 92h |
| 240 | 1.1.2.4.1.1.1 | Develop appropriate UML Artifacts |  | 5d | 2007-01-09 A | 2007-01-15 A |  | 100% |  |  |  |  |  |  | Krikor | 40h | 40h |
| 241 | 1.1.2.4.1.1.2 | Create Design Document |  | 5d | 2007-01-16 A | 2007-01-22 A | 240 | 100% |  |  |  |  |  |  | Krikor | 40h | 40h |
| 242 | 1.1.2.4.1.1.3 | Adopters/Collaborators Review |  | 2d | 2007-01-23 A | 2007-01-24 | 241 | 50% | 1d |  |  |  | 166.5d | 0d | Krikor | 16h | 8h |
| 243 | 1.1.2.4.1.1.4 | Developers Update |  | 1d | 2007-01-25 A | 2007-01-25 | 242 | 50% | 0.5d |  |  |  | 166d | 0d | Krikor | 8h | 4h |
| 244 | 1.1.2.4.1.2 | **AE Data Collection** |  | 13d | 2007-01-09 A | 2007-01-25 |  | 88% | 1.5d |  |  |  | 161d |  |  | 104h | 92h |
| 245 | 1.1.2.4.1.2.1 | Develop appropriate UML Artifacts |  | 5d | 2007-01-09 A | 2007-01-15 A |  | 100% |  |  |  |  |  |  | Rhett | 40h | 40h |
| 246 | 1.1.2.4.1.2.2 | Create Design Document |  | 5d | 2007-01-16 A | 2007-01-22 A | 245 | 100% |  |  |  |  |  |  | Rhett | 40h | 40h |
| 247 | 1.1.2.4.1.2.3 | Adopters/Collaborators Review |  | 2d | 2007-01-23 A | 2007-01-24 | 246 | 50% | 1d |  |  |  | 166.5d | 0d | Rhett | 16h | 8h |
| 248 | 1.1.2.4.1.2.4 | Developers Update |  | 1d | 2007-01-25 A | 2007-01-25 | 247 | 50% | 0.5d |  |  |  | 166d | 0d | Rhett | 8h | 4h |
| 249 | 1.1.2.4.1.3 | **Triggers/Notification** |  | 13d | 2007-01-09 A | 2007-01-25 |  | 88% | 1.5d |  |  |  | 161d |  |  | 104h | 92h |
| 250 | 1.1.2.4.1.3.1 | Develop appropriate UML Artifacts |  | 5d | 2007-01-09 A | 2007-01-15 A |  | 100% |  |  |  |  |  |  | Sujith | 40h | 40h |
| 251 | 1.1.2.4.1.3.2 | Create Design Document |  | 5d | 2007-01-16 A | 2007-01-22 A | 250 | 100% |  |  |  |  |  |  | Sujith | 40h | 40h |
| 252 | 1.1.2.4.1.3.3 | Adopters/Collaborators Review |  | 2d | 2007-01-23 A | 2007-01-24 | 251 | 50% | 1d |  |  |  | 166.5d | 0d | Sujith | 16h | 8h |
| 253 | 1.1.2.4.1.3.4 | Developers Update |  | 1d | 2007-01-25 A | 2007-01-25 | 252 | 50% | 0.5d |  |  |  | 166d | 0d | Sujith | 8h | 4h |
| 254 | 1.1.2.4.1.4 | Deliver Design document to BAH (Task 2.2) | milestone | 0d | 2007-01-25 | 2007-01-25 | 243, 248, 253 |  |  | 2007-01-23 | 2007-01-23 | 0d | 181d |  | Edmond |  |  |
| 255 | 1.1.2.4.1.5 | Deliver UML to BAH (Task 2.3) | milestone | 0d | 2007-01-25 | 2007-01-25 | 243, 248, 253 |  |  |  |  |  | 166d | 0d | Edmond |  |  |
| 256 | 1.1.2.4.1.6 | Formal Review by BAH |  | 15d | 2007-01-26 | 2007-02-15 | 255 |  |  |  |  |  | 166d |  | BAH | 120h |  |
| 257 | 1.1.2.4.2 | **Domain Model** |  | 3d | 2007-01-02 A | 2007-01-04 |  | 75% | 0.75d |  |  |  | 191d |  |  | 24h | 18h |
| 258 | 1.1.2.4.2.1 | Update Model/BRIDG Harmonization |  | 3d | 2007-01-02 A | 2007-01-04 |  | 75% | 0.75d |  |  |  | 196d |  | Ram | 24h | 18h |
| 259 | 1.1.2.4.3 | **Technical/Architecture Guide** |  | 32d | 2007-01-09 A | 2007-02-21 |  | 11% | 28.5d | 2007-01-12 | 2007-01-26 | 11d | 157d |  |  | 512h | 86h |
| 260 | 1.1.2.4.3.1 | Prepare draft of Tech/Arch Guide |  | 9d | 2007-01-09 A | 2007-01-19 | 216SS+5d | 25% | 6.75d | 2007-01-12 | 2007-01-18 | 5d | 163.25d | 0d | Vinay; Joshua | 144h | 36h |
| 261 | 1.1.2.4.3.2 | Adopter review |  | 5d | 2007-01-22 A | 2007-01-26 | 260 | 25% | 3.75d | 2007-01-19 | 2007-01-25 | 5d | 162d | 0d | Mayo; WF; AE_SIG; VCDE_WS; Arch_WS | 200h | 50h |
| 262 | 1.1.2.4.3.3 | Developer update |  | 3d | 2007-01-29 | 2007-01-31 | 261 |  |  | 2007-01-26 | 2007-01-26 | 1d | 162d | 0d | Vinay; Joshua | 48h |  |
| 263 | 1.1.2.4.3.4 | Deliver to BAH (Task 2.8) | milestone | 0d | 2007-01-31 | 2007-01-31 | 262 |  |  | 2007-01-26 | 2007-01-26 | 0d | 162d | 0d | Edmond |  |  |
| 264 | 1.1.2.4.3.5 | Formal Review by BAH |  | 15d | 2007-02-01 | 2007-02-21 | 263 |  |  |  |  |  | 162d |  | BAH | 120h |  |

| ID | WBS | Task | Duration | Start | Finish | Predecessors | Complete | Baseline start | Baseline finish | Baseline duration | Resources | Work | Actual work |
| --- | --- | --- | --- | --- | --- | --- | --- | --- | --- | --- | --- | --- | --- |
| 265 | 1.1.2.5 | **Implementation** | 19d | 2007-01-03 A | 2007-01-29 A | 216SS+1d | 100% | 2007-01-08 | 2007-01-24 | 13d |  | 1392h | 1392h |
| 266 | 1.1.2.5.1 | **Web interface** | 9d | 2007-01-03 A | 2007-01-15 A |  | 100% | 2007-01-08 | 2007-01-19 | 10d |  | 72h | 72h |
| 267 | 1.1.2.5.1.1 | Second web interface iteration | 9d | 2007-01-03 A | 2007-01-15 A |  | 100% | 2007-01-08 | 2007-01-19 | 10d | Richard | 72h | 72h |
| 268 | 1.1.2.5.2 | **Enterprise Service Bus** | 10d | 2007-01-03 A | 2007-01-16 A |  | 100% | 2007-01-08 | 2007-01-19 | 10d |  | 160h | 160h |
| 269 | 1.1.2.5.2.1 | Second ESB Iteration | 10d | 2007-01-03 A | 2007-01-16 A |  | 100% | 2007-01-08 | 2007-01-19 | 10d | Vinay; Joshua | 160h | 160h |
| 270 | 1.1.2.5.3 | **Grid service** | 13d | 2007-01-03 A | 2007-01-19 A |  | 100% | 2007-01-08 | 2007-01-24 | 13d |  | 208h | 208h |
| 271 | 1.1.2.5.3.1 | Implement Grid Service | 13d | 2007-01-03 A | 2007-01-19 A |  | 100% | 2007-01-08 | 2007-01-24 | 13d | Vinay; Joshua | 208h | 208h |
| 272 | 1.1.2.5.4 | **Implement Use Cases** | 15d | 2007-01-09 A | 2007-01-29 A |  | 100% | 2007-01-08 | 2007-01-23 | 12d |  | 952h | 952h |
| 273 | 1.1.2.5.4.1 | **Protocol Abstraction** | 12d | 2007-01-09 A | 2007-01-24 A | 239SS | 100% |  |  |  |  | 416h | 416h |
| 274 | 1.1.2.5.4.1.1 | UI - Incorporate HTML and CSS | 5d | 2007-01-16 A | 2007-01-22 A | 267 | 100% |  |  |  | Krikor | 40h | 40h |
| 275 | 1.1.2.5.4.1.2 | Implement O/R mapping | 10d | 2007-01-09 A | 2007-01-22 A |  | 100% | 2007-01-08 | 2007-01-19 | 10d | Krikor | 80h | 80h |
| 276 | 1.1.2.5.4.1.3 | Develop DAO | 10d | 2007-01-11 A | 2007-01-24 A | 275SS+2d | 100% | 2007-01-10 | 2007-01-23 | 10d | Krikor | 80h | 80h |
| 277 | 1.1.2.5.4.1.4 | Develop Service | 10d | 2007-01-11 A | 2007-01-24 A | 275SS+2d | 100% | 2007-01-10 | 2007-01-23 | 10d | Krikor | 80h | 80h |
| 278 | 1.1.2.5.4.1.5 | Develop controller and command objects | 10d | 2007-01-11 A | 2007-01-24 A | 275SS+2d | 100% | 2007-01-10 | 2007-01-23 | 10d | Krikor | 80h | 80h |
| 279 | 1.1.2.5.4.1.6 | Develop JUnit test cases | 7d | 2007-01-11 A | 2007-01-19 A | 275SS+2d | 100% | 2007-01-10 | 2007-01-18 | 7d | Krikor | 56h | 56h |
| 280 | 1.1.2.5.4.2 | **AE Data Collection** | 11.25d | 2007-01-09 A | 2007-01-24 A | 244SS | 100% |  |  |  |  | 416h | 416h |
| 281 | 1.1.2.5.4.2.1 | UI - Incorporate HTML and CSS | 5d | 2007-01-16 A | 2007-01-22 A | 267 | 100% |  |  |  | Rhett | 40h | 40h |
| 282 | 1.1.2.5.4.2.2 | Implement O/R mapping | 10d | 2007-01-09 A | 2007-01-22 A |  | 100% |  |  |  | Rhett | 80h | 80h |
| 283 | 1.1.2.5.4.2.3 | Develop DAO | 10d | 2007-01-09 A | 2007-01-24 A | 282SS+2d | 100% |  |  |  | Rhett | 80h | 80h |
| 284 | 1.1.2.5.4.2.4 | Develop Service | 10d | 2007-01-09 A | 2007-01-24 A | 282SS+2d | 100% |  |  |  | Rhett | 80h | 80h |
| 285 | 1.1.2.5.4.2.5 | Develop controller and command objects | 10d | 2007-01-09 A | 2007-01-24 A | 282SS+2d | 100% |  |  |  | Rhett | 80h | 80h |
| 286 | 1.1.2.5.4.2.6 | Develop JUnit test cases | 7d | 2007-01-09 A | 2007-01-19 A | 282SS+2d | 100% |  |  |  | Rhett | 56h | 56h |
| 287 | 1.1.2.5.4.3 | **Triggers/Notification** | 15d | 2007-01-09 A | 2007-01-29 A | 249SS | 100% |  |  |  |  | 120h | 120h |
| 288 | 1.1.2.5.4.3.1 | JBOSS Rules Setup/Development | 15d | 2007-01-09 A | 2007-01-29 A |  | 100% |  |  |  | Sujith | 120h | 120h |

| ID | WBS | Task | Type | Duration | Start | Finish | Predecessors | Complete | Remaining | Baseline start | Baseline finish | Baseline duration | Total slack | Free slack | Constraint | Resources | Work | Actual work |
| --- | --- | --- | --- | --- | --- | --- | --- | --- | --- | --- | --- | --- | --- | --- | --- | --- | --- | --- |
| 289 | 1.1.2.6 | **Testing** |  | 32d | 2007-01-09 A | 2007-02-21 |  | 4% | 30.83d | 2007-01-12 | 2007-01-26 | 11d | 157d |  |  |  | 504h | 12h |
| 290 | 1.1.2.6.1 | **Test Plan** |  | 18d | 2007-01-17 A | 2007-02-09 |  | 8% | 16.5d |  |  |  | 165d |  |  |  | 152h | 12h |
| 291 | 1.1.2.6.1.1 | Update Test Plan Document (Task 2.6) |  | 3d | 2007-01-17 A | 2007-01-19 |  | 50% | 1.5d | 2007-01-08 | 2007-01-12 | 5d | 170d | 0d | start no earlier than 2007-01-17 | Vinay; Ram | 32h | 12h |
| 292 | 1.1.2.6.1.2 | Submit to BAH | milestone | 0d | 2007-01-19 | 2007-01-19 | 291 |  |  |  |  |  | 170d | 0d |  | Edmond |  |  |
| 293 | 1.1.2.6.1.3 | Formal Review by BAH |  | 15d | 2007-01-22 | 2007-02-09 | 292 |  |  |  |  |  | 170d |  |  | BAH | 120h |  |
| 294 | 1.1.2.6.2 | **Create Functional Tests** |  | 28d | 2007-01-09 | 2007-02-15 | 216SS+5d |  |  | 2007-01-12 | 2007-01-24 | 9d | 161d |  |  |  | 168h |  |
| 295 | 1.1.2.6.2.1 | Create Functional Tests for Use Cases |  | 5d | 2007-01-09 | 2007-01-15 |  |  |  | 2007-01-12 | 2007-01-18 | 5d | 188d | 22d |  | Renee; David; Brenda; Natasha | 160h |  |
| 296 | 1.1.2.6.2.2 | RTM |  | 1d | 2007-02-15 | 2007-02-15 | 295, 231 |  |  | 2007-01-24 | 2007-01-24 | 1d | 166d |  |  | Sean | 8h |  |
| 297 | 1.1.2.6.3 | **Final Tests of Iteration** |  | 17d | 2007-01-30 | 2007-02-21 |  |  |  | 2007-01-24 | 2007-01-26 | 2d | 157d |  |  |  | 184h |  |
| 298 | 1.1.2.6.3.1 | Testing |  | 2d | 2007-01-30 | 2007-01-31 | 265 |  |  | 2007-01-25 | 2007-01-26 | 2d | 162d | 0d |  | Renee; David; Brenda; Natasha | 64h |  |
| 299 | 1.1.2.6.3.2 | Submit Test Results Report (Task 2.7) | milestone | 0d | 2007-01-31 | 2007-01-31 | 298 |  |  | 2007-01-26 | 2007-01-26 | 0d | 162d | 0d |  |  |  |  |
| 300 | 1.1.2.6.3.3 | Formal Review of Test results Report |  | 15d | 2007-02-01 | 2007-02-21 | 299 |  |  |  |  |  | 162d |  |  | BAH | 120h |  |
| 301 | 1.1.2.7 | **Deployment** |  | 26d | 2006-12-29 | 2007-02-06 |  |  |  |  |  |  | 168d |  |  |  | 200h |  |
| 302 | 1.1.2.7.1 | Submit prototype code (Task 2.5) | milestone | 0d | 2006-12-29 | 2006-12-29 |  |  |  |  |  |  | 184d | 0d |  | Ram |  |  |
| 303 | 1.1.2.7.2 | Formal Review of Code by BAH |  | 15d | 2007-01-02 | 2007-01-22 | 302 |  |  |  |  |  | 184d |  |  | BAH | 120h |  |
| 304 | 1.1.2.7.3 | Draft Installation Guide |  | 3d | 2007-01-02 | 2007-01-04 |  |  |  |  |  |  | 196d |  |  | Krikor; Vinay | 48h |  |
| 305 | 1.1.2.7.4 | Deploy Prototype for Iteration 2 at Mayo and WF |  | 1d | 2007-01-30 | 2007-01-30 | 265 |  |  | 2007-01-24 | 2007-01-24 | 0d | 178d |  |  | Vinay; Mayo; WF | 24h |  |
| 306 | 1.1.2.7.5 | Deploy Prototype / Make URL Public |  | 1d | 2007-02-06 | 2007-02-06 | 265FS+5d |  |  |  |  |  | 173d |  |  | Vinay | 8h |  |
| 307 | 1.1.3 | caBIG Annual Meeting |  | 3d | 2007-02-05 | 2007-02-07 |  |  |  |  |  |  | 0d |  | must start on 2007-02-05 |  |  |  |
| 308 | 1.2 | **Construction Phase** |  | 157d? | 2007-02-01 | 2007-09-07 |  |  |  | 2007-02-01 | 2007-09-12 | 160d | 0d |  |  |  | 8632h |  |
| 309 | 1.2.1 | **Construction Phase Iteration 1** |  | 36d? | 2007-02-01 | 2007-03-22 | 307 |  |  | 2007-02-01 | 2007-03-02 | 22d | 0d |  |  |  | 3752h |  |
| 310 | 1.2.1.1 | Begin Iteration 1 | milestone | 0d | 2007-02-14 | 2007-02-14 | 307 |  |  | 2007-02-01 | 2007-02-01 | 0d | 131d | 0d | start no earlier than 2007-02-14 |  |  |  |
| 311 | 1.2.1.2 | **Iteration Planning** |  | 1d | 2007-02-14 | 2007-02-14 | 310 |  |  |  |  |  | 159d |  |  |  | 48h |  |
| 312 | 1.2.1.2.1 | Review and finalize Ucases and Work List for Iteration |  | 1d | 2007-02-14 | 2007-02-14 |  |  |  |  |  |  | 167d |  |  | Edmond; Ram; Vinay | 24h |  |
| 313 | 1.2.1.2.2 | Review and finalize assignments for Iteration |  | 1d | 2007-02-14 | 2007-02-14 |  |  |  |  |  |  | 164d | 0d |  | Edmond; Ram; Vinay | 24h |  |

| ID | WBS | Task | Duration | Start | Finish | Predecessors | Total slack | Free slack | Constraint | Resources | Work |
| --- | --- | --- | --- | --- | --- | --- | --- | --- | --- | --- | --- |
| 314 | 1.2.1.3 | **Project Management** | 29d | 2007-02-01 | 2007-03-13 |  | 0d |  |  |  | 136h |
| 315 | 1.2.1.3.1 | Update Project Plan | 3d | 2007-02-15 | 2007-02-19 | 313 | 164d |  |  | Edmond | 24h |
| 316 | 1.2.1.3.2 | **CaAERS CCB (Task 2.10)** | 1d | 2007-03-05 | 2007-03-05 |  | 0d |  |  |  | 8h |
| 317 | 1.2.1.3.2.1 | CCB Meetings | 1d | 2007-03-05 | 2007-03-05 |  | 0d |  | must start on 2007-03-05 | Edmond | 8h |
| 318 | 1.2.1.3.3 | **Weekly Team/Developers Meeting** | 16d | 2007-02-12 | 2007-03-05 |  | 0d |  |  |  | 32h |
| 319 | 1.2.1.3.3.1 | Weekly Team Meeting 1 | 1d | 2007-02-12 | 2007-02-12 |  | 0d |  | must start on 2007-02-12 | Edmond | 8h |
| 320 | 1.2.1.3.3.2 | Weekly Team Meeting 2 | 1d | 2007-02-19 | 2007-02-19 |  | 0d |  | must start on 2007-02-19 | Edmond | 8h |
| 321 | 1.2.1.3.3.3 | Weekly Team Meeting 3 | 1d | 2007-02-26 | 2007-02-26 |  | 0d |  | must start on 2007-02-26 | Edmond | 8h |
| 322 | 1.2.1.3.3.4 | Weekly Team Meeting 4 | 1d | 2007-03-05 | 2007-03-05 |  | 0d |  | must start on 2007-03-05 | Edmond | 8h |
| 323 | 1.2.1.3.4 | **Status and Risk Reporting** | 23d | 2007-02-09 | 2007-03-13 |  | 0d |  |  |  | 72h |
| 324 | 1.2.1.3.4.1 | Bi-weekly Risk Update in caMP (Task 1.4) | 1d | 2007-02-09 | 2007-02-09 |  | 0d |  | must start on 2007-02-09 | Edmond | 8h |
| 325 | 1.2.1.3.4.2 | Bi-weekly Risk Matrix Update Meeting | 1d | 2007-02-09 | 2007-02-09 |  | 0d |  | must start on 2007-02-09 | Edmond | 8h |
| 326 | 1.2.1.3.4.3 | Bi-weekly Risk Update in caMP (Task 1.4) | 1d | 2007-02-23 | 2007-02-23 |  | 160d |  | start no earlier than 2007-02-23 | Edmond | 8h |
| 327 | 1.2.1.3.4.4 | Bi-weekly Risk Matrix Update Meeting | 1d | 2007-02-23 | 2007-02-23 |  | 0d |  | must start on 2007-02-23 | Edmond | 8h |
| 328 | 1.2.1.3.4.5 | Bi-weekly Status Update Meeting with BAH/NCI | 1d | 2007-02-16 | 2007-02-16 |  | 0d |  | must start on 2007-02-16 | Edmond | 8h |
| 329 | 1.2.1.3.4.6 | Bi-weekly Status Update Meeting with BAH/NCI | 1d | 2007-03-02 | 2007-03-02 |  | 0d |  | must start on 2007-03-02 | Edmond | 8h |
| 330 | 1.2.1.3.4.7 | Monthly Status Report (Task 1.3) | 1d | 2007-03-09 | 2007-03-09 |  | 0d |  | must finish on 2007-03-09 | Edmond | 8h |
| 331 | 1.2.1.3.4.8 | Monthly Risk Matrix Update (Task 1.3) | 1d | 2007-03-12 | 2007-03-12 | 330 | 148d | 0d |  | Edmond | 8h |
| 332 | 1.2.1.3.4.9 | Adopters Collaboration Report (Task 1.7) | 1d | 2007-03-13 | 2007-03-13 | 331 | 148d |  |  | Edmond | 8h |
| 333 | 1.2.1.3.5 | **Collaboration Management Activities** | 16d | 2007-02-01 | 2007-02-22 |  | 0d |  |  |  |  |
| 334 | 1.2.1.3.5.1 | Adopters Mtg | 1d | 2007-02-01 | 2007-02-01 |  | -5d | 0d | must start on 2007-02-01 |  |  |
| 335 | 1.2.1.3.5.2 | Bi-Weekly AE SIG Meeting | 1d | 2007-02-08 | 2007-02-08 |  | 0d |  | must start on 2007-02-08 |  |  |
| 336 | 1.2.1.3.5.3 | Adopters Mtg | 1d | 2007-02-15 | 2007-02-15 |  | 0d |  | must start on 2007-02-15 |  |  |
| 337 | 1.2.1.3.5.4 | Bi-Weekly AE SIG Meeting | 1d | 2007-02-22 | 2007-02-22 |  | 0d |  | must start on 2007-02-22 |  |  |

| ID | WBS | Task | Type | Duration | Start | Finish | Predecessors | Total slack | Free slack | Resources | Work |
| --- | --- | --- | --- | --- | --- | --- | --- | --- | --- | --- | --- |
| 338 | 1.2.1.4 | **Environment** |  | 3d | 2007-02-08 | 2007-02-12 |  | 164d |  |  |  |
| 339 | 1.2.1.4.1 | Update Environment |  | 3d | 2007-02-08 | 2007-02-12 |  | 169d |  |  |  |
| 340 | 1.2.1.5 | **SCM** |  | 5d | 2007-02-08 | 2007-02-14 |  | 162d |  |  |  |
| 341 | 1.2.1.5.1 | Manage Repository |  | 5d | 2007-02-08 | 2007-02-14 |  | 167d |  |  |  |
| 342 | 1.2.1.6 | **Requirements** |  | 27d | 2007-02-14 | 2007-03-22 |  | 136d |  |  | 808h |
| 343 | 1.2.1.6.1 | **Updated Use Case Specification and Realization** |  | 27d | 2007-02-14 | 2007-03-22 |  | 136d |  |  | 256h |
| 344 | 1.2.1.6.1.1 | Developer draft |  | 5d | 2007-02-14 | 2007-02-20 | 310 | 141d | 0d | Sean | 40h |
| 345 | 1.2.1.6.1.2 | Adopters/Collobators Review |  | 5d | 2007-02-21 | 2007-02-27 | 344 | 141d | 0d | Mayo; WF | 80h |
| 346 | 1.2.1.6.1.3 | Update Use Case Document |  | 2d | 2007-02-28 | 2007-03-01 | 345 | 141d | 0d | Sean | 16h |
| 347 | 1.2.1.6.1.4 | Submit Updated Use Case Document to BAH (Task 3.1) | milestone | 0d | 2007-03-01 | 2007-03-01 | 346 | 141d | 0d | Edmond |  |
| 348 | 1.2.1.6.1.5 | Formal Review of Updated Use Case Document |  | 15d | 2007-03-02 | 2007-03-22 | 347 | 141d |  | BAH | 120h |
| 349 | 1.2.1.6.2 | **Updated SRS Document** |  | 27d | 2007-02-14 | 2007-03-22 |  | 136d |  |  | 256h |
| 350 | 1.2.1.6.2.1 | Developer draft |  | 5d | 2007-02-14 | 2007-02-20 | 310 | 141d | 0d | Sean | 40h |
| 351 | 1.2.1.6.2.2 | Adopters/Collobators Review |  | 5d | 2007-02-21 | 2007-02-27 | 350 | 141d | 0d | Mayo; WF | 80h |
| 352 | 1.2.1.6.2.3 | Update SRS |  | 2d | 2007-02-28 | 2007-03-01 | 351 | 141d | 0d | Sean | 16h |
| 353 | 1.2.1.6.2.4 | Submit Updated SRS Document to BAH (Task 3.2) | milestone | 0d | 2007-03-01 | 2007-03-01 | 352 | 141d | 0d | Mayo; WF |  |
| 354 | 1.2.1.6.2.5 | Formal Review of Updated SRS |  | 15d | 2007-03-02 | 2007-03-22 | 353 | 141d |  | BAH | 120h |
| 355 | 1.2.1.6.3 | **Updated UML Static Class Diagram Model** |  | 27d | 2007-02-14 | 2007-03-22 |  | 136d |  |  | 296h |
| 356 | 1.2.1.6.3.1 | Developer draft |  | 5d | 2007-02-14 | 2007-02-20 | 310 | 141d | 0d | Ram; Sean | 80h |
| 357 | 1.2.1.6.3.2 | Adopters/Collobators Review |  | 5d | 2007-02-21 | 2007-02-27 | 356 | 141d | 0d | Mayo; WF | 80h |
| 358 | 1.2.1.6.3.3 | Update UML |  | 2d | 2007-02-28 | 2007-03-01 | 357 | 141d | 0d | Sean | 16h |
| 359 | 1.2.1.6.3.4 | Submit UML to BAH (Task 3.3) | milestone | 0d | 2007-03-01 | 2007-03-01 | 358 | 141d | 0d | Edmond |  |
| 360 | 1.2.1.6.3.5 | Formal Review of UML |  | 15d | 2007-03-02 | 2007-03-22 | 359 | 141d |  | BAH | 120h |
| 361 | 1.2.1.7 | **Analysis and Design** |  | 30d | 2007-02-08 | 2007-03-21 |  | 137d |  |  | 904h |
| 362 | 1.2.1.7.1 | **Design Documents** |  | 26d | 2007-02-08 | 2007-03-15 |  | 141d |  |  | 408h |
| 363 | 1.2.1.7.1.1 | **Protocol Abstraction (Diseases/Agents)** |  | 12d | 2007-02-14 | 2007-03-01 |  | 141d |  |  | 136h |
| 364 | 1.2.1.7.1.1.1 | Develop appropriate UML Artifacts |  | 2d | 2007-02-14 | 2007-02-15 | 310 | 146d | 0d | Krikor | 16h |
| 365 | 1.2.1.7.1.1.2 | Create Design Document |  | 3d | 2007-02-16 | 2007-02-20 | 364 | 146d | 0d | Krikor | 24h |
| 366 | 1.2.1.7.1.1.3 | Adopters/Collaborators Review |  | 5d | 2007-02-21 | 2007-02-27 | 365 | 146d | 0d | Mayo; WF | 80h |
| 367 | 1.2.1.7.1.1.4 | Developers Update |  | 2d | 2007-02-28 | 2007-03-01 | 366 | 146d | 1d | Krikor | 16h |

| ID | WBS | Task | Type | Duration | Start | Finish | Predecessors | Baseline start | Baseline finish | Baseline duration | Total slack | Free slack | Resources | Work |
| --- | --- | --- | --- | --- | --- | --- | --- | --- | --- | --- | --- | --- | --- | --- |
| 368 | 1.2.1.7.1.2 | **Protocol Abstration (Organizational Information)** |  | 12d | 2007-02-08 | 2007-02-23 |  |  |  |  | 145d |  |  | 136h |
| 369 | 1.2.1.7.1.2.1 | Develop appropriate UML Artifacts |  | 2d | 2007-02-08 | 2007-02-09 |  |  |  |  | 150d | 0d | Kulasekaran | 16h |
| 370 | 1.2.1.7.1.2.2 | Create Design Document |  | 3d | 2007-02-12 | 2007-02-14 | 369 |  |  |  | 150d | 0d | Kulasekaran | 24h |
| 371 | 1.2.1.7.1.2.3 | Adopters/Collaborators Review |  | 5d | 2007-02-15 | 2007-02-21 | 370 |  |  |  | 150d | 0d | Mayo; WF | 80h |
| 372 | 1.2.1.7.1.2.4 | Developers Update |  | 2d | 2007-02-22 | 2007-02-23 | 371 |  |  |  | 150d | 5d | Kulasekaran | 16h |
| 373 | 1.2.1.7.1.3 | **Triggers/Notification (cont'd)** |  | 12d | 2007-02-08 | 2007-02-23 |  |  |  |  | 145d |  |  | 136h |
| 374 | 1.2.1.7.1.3.1 | Develop appropriate UML Artifacts |  | 2d | 2007-02-08 | 2007-02-09 |  |  |  |  | 150d | 0d | Sujith | 16h |
| 375 | 1.2.1.7.1.3.2 | Create Design Document |  | 3d | 2007-02-12 | 2007-02-14 | 374 |  |  |  | 150d | 0d | Sujith | 24h |
| 376 | 1.2.1.7.1.3.3 | Adopters/Collaborators Review |  | 5d | 2007-02-15 | 2007-02-21 | 375 |  |  |  | 150d | 0d | Mayo; WF | 80h |
| 377 | 1.2.1.7.1.3.4 | Developers Update |  | 2d | 2007-02-22 | 2007-02-23 | 376 |  |  |  | 150d | 4d | Sujith | 16h |
| 378 | 1.2.1.7.1.4 | Deliver Design document to BAH (Task 3.4) | milestone | 0d | 2007-03-01 | 2007-03-01 | 367, 372, 377 |  |  |  | 156d |  |  |  |
| 379 | 1.2.1.7.1.5 | Deliver UML to BAH (Task 3.3) | milestone | 0d | 2007-03-01 | 2007-03-01 | 367, 372, 377 |  |  |  | 146d | 0d |  |  |
| 380 | 1.2.1.7.1.6 | Formal Review by BAH |  | 10d | 2007-03-02 | 2007-03-15 | 379 |  |  |  | 146d |  |  |  |
| 381 | 1.2.1.7.2 | **Domain Model** |  | 5d | 2007-02-14 | 2007-02-20 |  |  |  |  | 158d |  |  | 40h |
| 382 | 1.2.1.7.2.1 | Update Model/BRIDG Harmonization |  | 5d | 2007-02-14 | 2007-02-20 | 310 |  |  |  | 163d |  | Ram | 40h |
| 383 | 1.2.1.7.3 | **Technical/Architecture Guide** |  | 21d | 2007-02-21 | 2007-03-21 |  | 2007-01-12 | 2007-01-26 | 11d | 137d |  |  | 456h |
| 384 | 1.2.1.7.3.1 | Update Tech/Arch Guide |  | 6d | 2007-02-21 | 2007-02-28 | 310FS+5d | 2007-01-12 | 2007-01-18 | 5d | 142d | 0d | Vinay; Joshua | 96h |
| 385 | 1.2.1.7.3.2 | Deliver to BAH (Task 2.8) | milestone | 0d | 2007-02-28 | 2007-02-28 | 384 | 2007-01-26 | 2007-01-26 | 0d | 142d | 0d | Edmond |  |
| 386 | 1.2.1.7.3.3 | Formal Review |  | 15d | 2007-03-01 | 2007-03-21 | 385 |  |  |  | 142d |  | BAH; Mayo; WF | 360h |
| 387 | 1.2.1.8 | **Implementation** |  | 11d | 2007-02-14 | 2007-02-28 |  |  |  |  | 144d | 0d |  | 792h |
| 388 | 1.2.1.8.1 | **Infrastructure** |  | 10d | 2007-02-14 | 2007-02-27 |  |  |  |  | 145d |  |  | 280h |
| 389 | 1.2.1.8.1.1 | **Build Framework** |  | 5d | 2007-02-14 | 2007-02-20 |  |  |  |  | 150d |  |  | 40h |
| 390 | 1.2.1.8.1.1.1 | Maven Setup |  | 5d | 2007-02-14 | 2007-02-20 | 310 |  |  |  | 6d |  | Rhett | 40h |
| 391 | 1.2.1.8.1.2 | **Web interface** |  | 10d | 2007-02-14 | 2007-02-27 |  |  |  |  | 145d |  |  | 160h |
| 392 | 1.2.1.8.1.2.1 | UI Refactoring |  | 10d | 2007-02-14 | 2007-02-27 | 310 |  |  |  | 1d |  | Richard; Rhett | 160h |

| ID | WBS | Task | Type | Duration | Start | Finish | Predecessors | Total slack | Free slack | Resources | Work |
| --- | --- | --- | --- | --- | --- | --- | --- | --- | --- | --- | --- |
| 393 | 1.2.1.8.1.3 | **Security** |  | 10d | 2007-02-14 | 2007-02-27 |  | 145d |  |  | 80h |
| 394 | 1.2.1.8.1.3.1 | Acegi - CSM |  | 10d | 2007-02-14 | 2007-02-27 | 310 | 1d |  | Joshua | 80h |
| 395 | 1.2.1.8.2 | **Implement Use Cases** |  | 11d | 2007-02-14 | 2007-02-28 |  | 144d |  |  | 512h |
| 396 | 1.2.1.8.2.1 | **Protocol Abstraction (Diseases/Agents)** |  | 11d | 2007-02-14 | 2007-02-28 |  | 144d |  |  | 216h |
| 397 | 1.2.1.8.2.1.1 | Implement O/R mapping |  | 5d | 2007-02-14 | 2007-02-20 | 310 | 144d | 0d | Krikor | 40h |
| 398 | 1.2.1.8.2.1.2 | Develop DAO |  | 7d | 2007-02-16 | 2007-02-26 | 397SS+2d | 144d | 0d | Krikor | 56h |
| 399 | 1.2.1.8.2.1.3 | Develop Service |  | 7d | 2007-02-20 | 2007-02-28 | 398SS+2d | 144d | 0d | Krikor | 56h |
| 400 | 1.2.1.8.2.1.4 | Develop controller and command objects |  | 5d | 2007-02-22 | 2007-02-28 | 399SS+2d | 144d | 0d | Krikor | 40h |
| 401 | 1.2.1.8.2.1.5 | Develop JUnit test cases |  | 3d | 2007-02-26 | 2007-02-28 | 400SS+2d | 144d |  | Krikor | 24h |
| 402 | 1.2.1.8.2.2 | **Protocol Abstraction (Organizational Information)** |  | 11d | 2007-02-14 | 2007-02-28 |  | 144d |  |  | 216h |
| 403 | 1.2.1.8.2.2.1 | Implement O/R mapping |  | 5d | 2007-02-14 | 2007-02-20 | 310 | 144d | 0d | Kulasekaran | 40h |
| 404 | 1.2.1.8.2.2.2 | Develop DAO |  | 7d | 2007-02-16 | 2007-02-26 | 403SS+2d | 144d | 0d | Kulasekaran | 56h |
| 405 | 1.2.1.8.2.2.3 | Develop Service |  | 7d | 2007-02-20 | 2007-02-28 | 404SS+2d | 144d | 0d | Kulasekaran | 56h |
| 406 | 1.2.1.8.2.2.4 | Develop controller and command objects |  | 5d | 2007-02-22 | 2007-02-28 | 405SS+2d | 144d | 0d | Kulasekaran | 40h |
| 407 | 1.2.1.8.2.2.5 | Develop JUnit test cases |  | 3d | 2007-02-26 | 2007-02-28 | 406SS+2d | 144d |  | Kulasekaran | 24h |
| 408 | 1.2.1.8.2.3 | **Triggers/Notification (cont'd)** |  | 10d | 2007-02-14 | 2007-02-27 |  | 145d |  |  | 80h |
| 409 | 1.2.1.8.2.3.1 | AE Trigger Notification |  | 10d | 2007-02-14 | 2007-02-27 | 310 | 1d |  | Sujith | 80h |
| 410 | 1.2.1.9 | **Testing** |  | 26d? | 2007-02-14 | 2007-03-21 |  | 8d |  |  | 920h |
| 411 | 1.2.1.9.1 | **Test Plan** |  | 11d? | 2007-02-14 | 2007-02-28 |  | 147d |  |  | 88h |
| 412 | 1.2.1.9.1.1 | Update Test Plan Document (Task 3.6) |  | 10d | 2007-02-14 | 2007-02-27 | 310 | 147d | 0d | Ram | 80h |
| 413 | 1.2.1.9.1.2 | Submit to BAH | milestone | 0d | 2007-02-27 | 2007-02-27 | 412 | 147d | 0d | Edmond |  |
| 414 | 1.2.1.9.1.3 | Formal Review by BAH |  | 1d? | 2007-02-28 | 2007-02-28 | 413 | 147d |  | BAH | 8h |
| 415 | 1.2.1.9.2 | **Create Functional Tests** |  | 10d | 2007-02-14 | 2007-02-27 |  | 148d |  |  | 200h |
| 416 | 1.2.1.9.2.1 | Create Functional Tests for Use Cases |  | 5d | 2007-02-14 | 2007-02-20 | 310 | 148d | 0d | Renee; Natasha; Sean | 120h |
| 417 | 1.2.1.9.2.2 | Review by Adopters |  | 5d | 2007-02-21 | 2007-02-27 | 416 | 148d |  | Mayo; WF | 80h |

| ID | WBS | Task | Type | Duration | Start | Finish | Predecessors | Baseline start | Baseline finish | Baseline duration | Total slack | Free slack | Constraint | Resources | Work |
| --- | --- | --- | --- | --- | --- | --- | --- | --- | --- | --- | --- | --- | --- | --- | --- |
| 418 | 1.2.1.9.3 | **RTM** |  | 5d | 2007-02-21 | 2007-02-27 |  |  |  |  | 148d |  |  |  | 40h |
| 419 | 1.2.1.9.3.1 | Create RTM |  | 5d | 2007-02-21 | 2007-02-27 | 416 |  |  |  | 148d |  |  | Sean | 40h |
| 420 | 1.2.1.9.4 | **Test Data** |  | 20d | 2007-02-14 | 2007-03-13 |  |  |  |  | 138d |  |  |  | 400h |
| 421 | 1.2.1.9.4.1 | Create test data set (Task 3.7) |  | 10d | 2007-02-14 | 2007-02-27 | 310 |  |  |  | 138d | 0d |  | Renee; David | 160h |
| 422 | 1.2.1.9.4.2 | Submit for Review | milestone | 0d | 2007-02-27 | 2007-02-27 | 421 |  |  |  | 138d | 0d |  | Edmond |  |
| 423 | 1.2.1.9.4.3 | Review |  | 10d | 2007-02-28 | 2007-03-13 | 422 |  |  |  | 138d |  |  | BAH; Mayo; WF | 240h |
| 424 | 1.2.1.9.5 | **Testing** |  | 18d | 2007-02-26 | 2007-03-21 |  |  |  |  | 0d |  |  |  | 192h |
| 425 | 1.2.1.9.5.1 | Testing |  | 3d | 2007-02-26 | 2007-02-28 |  |  |  |  | 0d |  | must start on 2007-02-26 | Renee; David; Natasha | 72h |
| 426 | 1.2.1.9.5.2 | Submit Test Results Report (Task 3.7) | milestone | 0d | 2007-02-28 | 2007-02-28 | 425 |  |  |  | 132d | 0d |  | Edmond |  |
| 427 | 1.2.1.9.5.3 | Formal Review of Test results Report |  | 15d | 2007-03-01 | 2007-03-21 | 426 |  |  |  | 132d |  |  | BAH | 120h |
| 428 | 1.2.1.10 | **Deployment** |  | 10d | 2007-02-28 | 2007-03-14 |  |  |  |  | 0d |  |  |  | 144h |
| 429 | 1.2.1.10.1 | Submit prototype code (Task 3.5) | milestone | 0d | 2007-02-28 | 2007-02-28 | 425 |  |  |  | 0d |  |  | Ram |  |
| 430 | 1.2.1.10.2 | Formal Review of Code by BAH |  | 10d | 2007-03-01 | 2007-03-14 | 429 |  |  |  | 137d |  |  | BAH | 80h |
| 431 | 1.2.1.10.3 | Update Installation Guide |  | 2d | 2007-03-01 | 2007-03-02 | 387 |  |  |  | 149d | 3d |  | Krikor; Vinay | 32h |
| 432 | 1.2.1.10.4 | Deploy Prototype for Iteration 1 at Mayo and WF |  | 1d | 2007-03-05 | 2007-03-05 | 425, 431 |  |  |  | 144d |  |  | Vinay; Mayo; WF | 24h |
| 433 | 1.2.1.10.5 | Make URL Public |  | 1d | 2007-03-01 | 2007-03-01 | 425 |  |  |  | 146d |  |  | Vinay | 8h |
| 434 | 1.2.1.11 | Finish Iteration 1 | milestone | 0d | 2007-02-28 | 2007-02-28 | 429 | 2007-02-28 | 2007-02-28 | 0d | 0d |  |  |  |  |
| 435 | 1.2.2 | **Construction Phase Iteration 2** |  | 36d? | 2007-03-01 | 2007-04-19 | 434 | 2007-03-02 | 2007-04-04 | 23d | 0d |  |  |  | 4880h |
| 436 | 1.2.2.1 | Begin Iteration 2 | milestone | 0d | 2007-03-01 | 2007-03-01 | 434 | 2007-03-02 | 2007-03-02 | 0d | 142d | 0d | start no earlier than 2007-03-01 |  |  |
| 437 | 1.2.2.2 | **Iteration Planning** |  | 2d | 2007-03-01 | 2007-03-02 |  |  |  |  | 142d |  |  |  | 48h |
| 438 | 1.2.2.2.1 | Review and finalize Ucases and Work List for Iteration |  | 1d | 2007-03-01 | 2007-03-01 | 436 |  |  |  | 142d | 0d |  | Edmond; Ram; Vinay | 24h |
| 439 | 1.2.2.2.2 | Review and finalize assignments for Iteration |  | 1d | 2007-03-02 | 2007-03-02 | 438 |  |  |  | 142d | 0d |  | Edmond; Ram; Vinay | 24h |
| 440 | 1.2.2.3 | **Project Management** |  | 30d | 2007-03-05 | 2007-04-13 |  |  |  |  | 8d |  |  |  | 160h |
| 441 | 1.2.2.3.1 | Update Project Plan |  | 3d | 2007-03-05 | 2007-03-07 | 439 |  |  |  | 142d |  |  | Edmond | 24h |

| ID | WBS | Task | Duration | Start | Finish | Predecessors | Total slack | Constraint | Resources | Work |
| --- | --- | --- | --- | --- | --- | --- | --- | --- | --- | --- |
| 442 | 1.2.2.3.2 | **CaAERS CCB (Task 2.10)** | 1d | 2007-04-02 | 2007-04-02 |  | 124d |  |  | 8h |
| 443 | 1.2.2.3.2.1 | CCB Meetings | 1d | 2007-04-02 | 2007-04-02 |  | 124d | finish no earlier than 2007-04-02 | Edmond | 8h |
| 444 | 1.2.2.3.3 | **Weekly Team/Developers Meeting** | 16d | 2007-03-19 | 2007-04-09 |  | 0d |  |  | 32h |
| 445 | 1.2.2.3.3.1 | Weekly Team Meeting 1 | 1d | 2007-03-19 | 2007-03-19 |  | 0d | must start on 2007-03-19 | Edmond | 8h |
| 446 | 1.2.2.3.3.2 | Weekly Team Meeting 2 | 1d | 2007-03-26 | 2007-03-26 |  | 0d | must start on 2007-03-26 | Edmond | 8h |
| 447 | 1.2.2.3.3.3 | Weekly Team Meeting 3 | 1d | 2007-04-02 | 2007-04-02 |  | 0d | must start on 2007-04-02 | Edmond | 8h |
| 448 | 1.2.2.3.3.4 | Weekly Team Meeting 4 | 1d | 2007-04-09 | 2007-04-09 |  | 0d | must start on 2007-04-09 | Edmond | 8h |
| 449 | 1.2.2.3.4 | **Status and Risk Reporting** | 21d | 2007-03-16 | 2007-04-13 |  | 0d |  |  | 64h |
| 450 | 1.2.2.3.4.1 | Bi-weekly Risk Update in caMP (Task 1.4) | 1d | 2007-03-16 | 2007-03-16 |  | 0d | must start on 2007-03-16 | Edmond | 8h |
| 451 | 1.2.2.3.4.2 | Bi-weekly Risk Matrix Update Meeting | 1d | 2007-03-16 | 2007-03-16 |  | 0d | must start on 2007-03-16 | Edmond | 8h |
| 452 | 1.2.2.3.4.3 | Bi-weekly Risk Update in caMP (Task 1.4) | 1d | 2007-03-30 | 2007-03-30 |  | 130d | start no earlier than 2007-03-30 | Edmond | 8h |
| 453 | 1.2.2.3.4.4 | Bi-weekly Risk Matrix Update Meeting | 1d | 2007-03-30 | 2007-03-30 |  | 0d | must start on 2007-03-30 | Edmond | 8h |
| 454 | 1.2.2.3.4.5 | Bi-weekly Status Update Meeting with BAH/NCI | 1d | 2007-03-23 | 2007-03-23 |  | 0d | must start on 2007-03-23 | Edmond | 8h |
| 455 | 1.2.2.3.4.6 | Bi-weekly Status Update Meeting with BAH/NCI | 1d | 2007-04-06 | 2007-04-06 |  | 0d | must start on 2007-04-06 | Edmond | 8h |
| 456 | 1.2.2.3.4.7 | Monthly Status Report (Task 1.3) | 1d | 2007-04-13 | 2007-04-13 |  | 0d | must finish on 2007-04-13 | Edmond | 8h |
| 457 | 1.2.2.3.4.8 | Monthly Risk Matrix Update (Task 1.3) | 1d | 2007-04-13 | 2007-04-13 | 456SS | 120d |  | Edmond | 8h |
| 458 | 1.2.2.3.5 | **Collaboration Management Activities** | 16d | 2007-03-15 | 2007-04-05 |  | 0d |  |  | 32h |
| 459 | 1.2.2.3.5.1 | Adopters Mtg | 1d | 2007-03-15 | 2007-03-15 |  | 0d | must start on 2007-03-15 | Edmond | 8h |
| 460 | 1.2.2.3.5.2 | Bi-Weekly AE SIG Meeting | 1d | 2007-03-22 | 2007-03-22 |  | 0d | must start on 2007-03-22 | Edmond | 8h |
| 461 | 1.2.2.3.5.3 | Adopters Mtg | 1d | 2007-03-29 | 2007-03-29 |  | 0d | must start on 2007-03-29 | Edmond | 8h |
| 462 | 1.2.2.3.5.4 | Bi-Weekly AE SIG Meeting | 1d | 2007-04-05 | 2007-04-05 |  | 0d | must start on 2007-04-05 | Edmond | 8h |
| 463 | 1.2.2.4 | **Environment** | 3d | 2007-03-01 | 2007-03-05 |  | 144d |  |  | 24h |
| 464 | 1.2.2.4.1 | Update Environment | 3d | 2007-03-01 | 2007-03-05 | 434 | 144d |  | Vinay | 24h |
| 465 | 1.2.2.5 | **SCM** | 5d | 2007-03-01 | 2007-03-07 |  | 142d |  |  | 40h |
| 466 | 1.2.2.5.1 | Manage Repository | 5d | 2007-03-01 | 2007-03-07 | 434 | 142d |  | Rhett | 40h |

| ID | WBS | Task | Type | Duration | Start | Finish | Predecessors | Total slack | Free slack | Resources | Work |
| --- | --- | --- | --- | --- | --- | --- | --- | --- | --- | --- | --- |
| 467 | 1.2.2.6 | **Requirements** |  | 30d | 2007-03-01 | 2007-04-11 |  | 117d |  |  | 880h |
| 468 | 1.2.2.6.1 | **Updated Use Case Specification and Realization** |  | 30d | 2007-03-01 | 2007-04-11 |  | 117d |  |  | 280h |
| 469 | 1.2.2.6.1.1 | Developer draft |  | 5d | 2007-03-01 | 2007-03-07 | 434 | 117d | 0d | Sean | 40h |
| 470 | 1.2.2.6.1.2 | Adopters/Collobators Review |  | 5d | 2007-03-08 | 2007-03-14 | 469 | 117d | 0d | Mayo; WF | 80h |
| 471 | 1.2.2.6.1.3 | Update Use Case Document |  | 5d | 2007-03-15 | 2007-03-21 | 470 | 117d | 0d | Sean | 40h |
| 472 | 1.2.2.6.1.4 | Submit Updated Use Case Document to BAH (Task 3.1) | milestone | 0d | 2007-03-21 | 2007-03-21 | 471 | 117d | 0d | Edmond |  |
| 473 | 1.2.2.6.1.5 | Formal Review of Updated Use Case Document |  | 15d | 2007-03-22 | 2007-04-11 | 472 | 117d |  | BAH | 120h |
| 474 | 1.2.2.6.2 | **Updated SRS Document** |  | 30d | 2007-03-01 | 2007-04-11 |  | 117d |  |  | 280h |
| 475 | 1.2.2.6.2.1 | Developer draft |  | 5d | 2007-03-01 | 2007-03-07 | 434 | 117d | 0d | Sean | 40h |
| 476 | 1.2.2.6.2.2 | Adopters/Collobators Review |  | 5d | 2007-03-08 | 2007-03-14 | 475 | 117d | 0d | Mayo; WF | 80h |
| 477 | 1.2.2.6.2.3 | Update SRS |  | 5d | 2007-03-15 | 2007-03-21 | 476 | 117d | 0d | Sean | 40h |
| 478 | 1.2.2.6.2.4 | Submit Updated SRS Document to BAH (Task 3.2) | milestone | 0d | 2007-03-21 | 2007-03-21 | 477 | 117d | 0d | Mayo; WF |  |
| 479 | 1.2.2.6.2.5 | Formal Review of Updated SRS |  | 15d | 2007-03-22 | 2007-04-11 | 478 | 117d |  | BAH | 120h |
| 480 | 1.2.2.6.3 | **Updated UML Static Class Diagram Model** |  | 30d | 2007-03-01 | 2007-04-11 |  | 117d |  |  | 320h |
| 481 | 1.2.2.6.3.1 | Developer draft |  | 5d | 2007-03-01 | 2007-03-07 | 434 | 117d | 0d | Ram; Sean | 80h |
| 482 | 1.2.2.6.3.2 | Adopters/Collobators Review |  | 5d | 2007-03-08 | 2007-03-14 | 481 | 117d | 0d | Mayo; WF | 80h |
| 483 | 1.2.2.6.3.3 | Update UML |  | 5d | 2007-03-15 | 2007-03-21 | 482 | 117d | 0d | Sean | 40h |
| 484 | 1.2.2.6.3.4 | Submit UML to BAH (Task 3.3) | milestone | 0d | 2007-03-21 | 2007-03-21 | 483 | 117d | 0d | Edmond |  |
| 485 | 1.2.2.6.3.5 | Formal Review of UML |  | 15d | 2007-03-22 | 2007-04-11 | 484 | 117d |  | BAH | 120h |
| 486 | 1.2.2.7 | **Analysis and Design** |  | 27d? | 2007-03-01 | 2007-04-06 |  | 120d |  |  | 1032h |
| 487 | 1.2.2.7.1 | **Design Documents** |  | 27d? | 2007-03-01 | 2007-04-06 |  | 120d |  |  | 552h |
| 488 | 1.2.2.7.1.1 | **New Version of Existing Study** |  | 17d | 2007-03-01 | 2007-03-23 |  | 120d |  |  | 176h |
| 489 | 1.2.2.7.1.1.1 | Develop appropriate UML Artifacts |  | 5d | 2007-03-01 | 2007-03-07 |  | 120d | 0d | Krikor | 40h |
| 490 | 1.2.2.7.1.1.2 | Create Design Document |  | 5d | 2007-03-08 | 2007-03-14 | 489 | 120d | 0d | Krikor | 40h |
| 491 | 1.2.2.7.1.1.3 | Adopters/Collaborators Review |  | 5d | 2007-03-15 | 2007-03-21 | 490 | 120d | 0d | Mayo; WF | 80h |
| 492 | 1.2.2.7.1.1.4 | Developers Update |  | 2d | 2007-03-22 | 2007-03-23 | 491 | 120d | 0d | Krikor | 16h |

| ID | WBS | Task | Type | Duration | Start | Finish | Predecessors | Baseline start | Baseline finish | Baseline duration | Total slack | Free slack | Resources | Work |
| --- | --- | --- | --- | --- | --- | --- | --- | --- | --- | --- | --- | --- | --- | --- |
| 493 | 1.2.2.7.1.2 | **AE Data Collection** |  | 17d | 2007-03-01 | 2007-03-23 |  |  |  |  | 120d |  |  | 176h |
| 494 | 1.2.2.7.1.2.1 | Develop appropriate UML Artifacts |  | 5d | 2007-03-01 | 2007-03-07 |  |  |  |  | 120d | 0d | Rhett | 40h |
| 495 | 1.2.2.7.1.2.2 | Create Design Document |  | 5d | 2007-03-08 | 2007-03-14 | 494 |  |  |  | 120d | 0d | Rhett | 40h |
| 496 | 1.2.2.7.1.2.3 | Adopters/Collaborators Review |  | 5d | 2007-03-15 | 2007-03-21 | 495 |  |  |  | 120d | 0d | Mayo; WF | 80h |
| 497 | 1.2.2.7.1.2.4 | Developers Update |  | 2d | 2007-03-22 | 2007-03-23 | 496 |  |  |  | 120d | 0d | Rhett | 16h |
| 498 | 1.2.2.7.1.3 | **Candidate AE** |  | 1d? | 2007-03-01 | 2007-03-01 |  |  |  |  | 136d |  |  | 24h |
| 499 | 1.2.2.7.1.3.1 | Develop appropriate UML Artifacts |  | 1d? | 2007-03-01 | 2007-03-01 |  |  |  |  | 146d |  | Kulasekeran | 8h |
| 500 | 1.2.2.7.1.3.2 | Create Design Document |  | 1d? | 2007-03-01 | 2007-03-01 |  |  |  |  | 146d |  | Kulasekeran | 8h |
| 501 | 1.2.2.7.1.3.3 | Adopters/Collaborators Review |  | 1d? | 2007-03-01 | 2007-03-01 |  |  |  |  | 146d |  |  |  |
| 502 | 1.2.2.7.1.3.4 | Developers Update |  | 1d? | 2007-03-01 | 2007-03-01 |  |  |  |  | 136d | 16d | Kulasekeran | 8h |
| 503 | 1.2.2.7.1.4 | **Institution AE Notification Trigger** |  | 17d | 2007-03-01 | 2007-03-23 |  |  |  |  | 120d |  |  | 176h |
| 504 | 1.2.2.7.1.4.1 | Develop appropriate UML Artifacts |  | 5d | 2007-03-01 | 2007-03-07 |  |  |  |  | 120d | 0d | Sujith | 40h |
| 505 | 1.2.2.7.1.4.2 | Create Design Document |  | 5d | 2007-03-08 | 2007-03-14 | 504 |  |  |  | 120d | 0d | Sujith | 40h |
| 506 | 1.2.2.7.1.4.3 | Adopters/Collaborators Review |  | 5d | 2007-03-15 | 2007-03-21 | 505 |  |  |  | 120d | 0d | Mayo; WF | 80h |
| 507 | 1.2.2.7.1.4.4 | Developers Update |  | 2d | 2007-03-22 | 2007-03-23 | 506 |  |  |  | 120d | 0d | Sujith | 16h |
| 508 | 1.2.2.7.1.5 | Deliver Design document to BAH (Task 3.4) | milestone | 0d | 2007-03-23 | 2007-03-23 | 492, 497, 507, 502 |  |  |  | 130d |  |  |  |
| 509 | 1.2.2.7.1.6 | Deliver UML to BAH (Task 3.3) | milestone | 0d | 2007-03-23 | 2007-03-23 | 492, 497, 507, 502 |  |  |  | 120d | 0d |  |  |
| 510 | 1.2.2.7.1.7 | Formal Review by BAH |  | 10d | 2007-03-26 | 2007-04-06 | 509 |  |  |  | 120d |  |  |  |
| 511 | 1.2.2.7.2 | **Domain Model** |  | 5d | 2007-03-01 | 2007-03-07 |  |  |  |  | 142d |  |  | 40h |
| 512 | 1.2.2.7.2.1 | Update Model/BRIDG Harmonization |  | 5d | 2007-03-01 | 2007-03-07 | 434 |  |  |  | 142d |  | Ram | 40h |
| 513 | 1.2.2.7.3 | **Technical/Architecture Guide** |  | 20d | 2007-03-01 | 2007-03-28 |  | 2007-01-12 | 2007-01-26 | 11d | 127d |  |  | 440h |
| 514 | 1.2.2.7.3.1 | Update Tech/Arch Guide |  | 5d | 2007-03-01 | 2007-03-07 | 434 | 2007-01-12 | 2007-01-18 | 5d | 127d | 0d | Vinay; Joshua | 80h |
| 515 | 1.2.2.7.3.2 | Deliver to BAH (Task 2.8) | milestone | 0d | 2007-03-07 | 2007-03-07 | 514 | 2007-01-26 | 2007-01-26 | 0d | 127d | 0d | Edmond |  |
| 516 | 1.2.2.7.3.3 | Formal Review |  | 15d | 2007-03-08 | 2007-03-28 | 515 |  |  |  | 127d |  | BAH; Mayo; WF | 360h |

| ID | WBS | Task | Duration | Start | Finish | Predecessors | Total slack | Resources | Work |
| --- | --- | --- | --- | --- | --- | --- | --- | --- | --- |
| 517 | 1.2.2.8 | **Implementation** | 16d | 2007-03-01 | 2007-03-22 |  | 0d |  | 1464h |
| 518 | 1.2.2.8.1 | **Web interface** | 5d | 2007-03-01 | 2007-03-07 |  | 11d |  | 40h |
| 519 | 1.2.2.8.1.1 | Fourth web interface iteration | 5d | 2007-03-01 | 2007-03-07 | 434 | 11d | Richard | 40h |
| 520 | 1.2.2.8.2 | **Enterprise Service Bus** | 5d | 2007-03-01 | 2007-03-07 |  | 11d |  | 40h |
| 521 | 1.2.2.8.2.1 | Fourth ESB Iteration | 5d | 2007-03-01 | 2007-03-07 | 434 | 11d | Joshua | 40h |
| 522 | 1.2.2.8.3 | **Grid service** | 5d | 2007-03-01 | 2007-03-07 |  | 11d |  | 40h |
| 523 | 1.2.2.8.3.1 | Implement Grid Service | 5d | 2007-03-01 | 2007-03-07 | 434 | 11d | Joshua | 40h |
| 524 | 1.2.2.8.4 | **Implement Use Cases** | 16d | 2007-03-01 | 2007-03-22 |  | 0d |  | 1344h |
| 525 | 1.2.2.8.4.1 | **New Version of Study** | 16d | 2007-03-01 | 2007-03-22 |  | 0d |  | 336h |
| 526 | 1.2.2.8.4.1.1 | Implement O/R mapping | 5d | 2007-03-01 | 2007-03-07 | 434 | 0d | Krikor | 40h |
| 527 | 1.2.2.8.4.1.2 | Develop DAO | 10d | 2007-03-05 | 2007-03-16 | 526SS+2d | 0d | Krikor | 80h |
| 528 | 1.2.2.8.4.1.3 | Develop Service | 10d | 2007-03-07 | 2007-03-20 | 527SS+2d | 0d | Krikor | 80h |
| 529 | 1.2.2.8.4.1.4 | Develop controller and command objects | 10d | 2007-03-09 | 2007-03-22 | 528SS+2d | 0d | Krikor | 80h |
| 530 | 1.2.2.8.4.1.5 | Develop JUnit test cases | 7d | 2007-03-13 | 2007-03-21 | 529SS+2d | 1d | Krikor | 56h |
| 531 | 1.2.2.8.4.2 | **AE Data Collection (cont'd)** | 16d | 2007-03-01 | 2007-03-22 |  | 0d |  | 336h |
| 532 | 1.2.2.8.4.2.1 | Implement O/R mapping | 5d | 2007-03-01 | 2007-03-07 | 434 | 0d | Rhett | 40h |
| 533 | 1.2.2.8.4.2.2 | Develop DAO | 10d | 2007-03-05 | 2007-03-16 | 532SS+2d | 0d | Rhett | 80h |
| 534 | 1.2.2.8.4.2.3 | Develop Service | 10d | 2007-03-07 | 2007-03-20 | 533SS+2d | 0d | Rhett | 80h |
| 535 | 1.2.2.8.4.2.4 | Develop controller and command objects | 10d | 2007-03-09 | 2007-03-22 | 534SS+2d | 0d | Rhett | 80h |
| 536 | 1.2.2.8.4.2.5 | Develop JUnit test cases | 7d | 2007-03-13 | 2007-03-21 | 535SS+2d | 1d | Rhett | 56h |
| 537 | 1.2.2.8.4.3 | **Candidate AE** | 16d | 2007-03-01 | 2007-03-22 |  | 0d |  | 336h |
| 538 | 1.2.2.8.4.3.1 | Implement O/R mapping | 5d | 2007-03-01 | 2007-03-07 | 434 | 0d | Kulasekaran | 40h |
| 539 | 1.2.2.8.4.3.2 | Develop DAO | 10d | 2007-03-05 | 2007-03-16 | 538SS+2d | 0d | Kulasekaran | 80h |
| 540 | 1.2.2.8.4.3.3 | Develop Service | 10d | 2007-03-07 | 2007-03-20 | 539SS+2d | 0d | Kulasekaran | 80h |
| 541 | 1.2.2.8.4.3.4 | Develop controller and command objects | 10d | 2007-03-09 | 2007-03-22 | 540SS+2d | 0d | Kulasekaran | 80h |
| 542 | 1.2.2.8.4.3.5 | Develop JUnit test cases | 7d | 2007-03-13 | 2007-03-21 | 541SS+2d | 1d | Kulasekaran | 56h |

| ID | WBS | Task | Type | Duration | Start | Finish | Predecessors | Total slack | Free slack | Resources | Work |
| --- | --- | --- | --- | --- | --- | --- | --- | --- | --- | --- | --- |
| 543 | 1.2.2.8.4.4 | **Triggers/Notification (cont'd)** |  | 16d | 2007-03-01 | 2007-03-22 |  | 0d |  |  | 336h |
| 544 | 1.2.2.8.4.4.1 | Implement O/R mapping |  | 5d | 2007-03-01 | 2007-03-07 | 434 | 0d |  | Sujith | 40h |
| 545 | 1.2.2.8.4.4.2 | Develop DAO |  | 10d | 2007-03-05 | 2007-03-16 | 544SS+2d | 0d |  | Sujith | 80h |
| 546 | 1.2.2.8.4.4.3 | Develop Service |  | 10d | 2007-03-07 | 2007-03-20 | 545SS+2d | 0d |  | Sujith | 80h |
| 547 | 1.2.2.8.4.4.4 | Develop controller and command objects |  | 10d | 2007-03-09 | 2007-03-22 | 546SS+2d | 0d |  | Sujith | 80h |
| 548 | 1.2.2.8.4.4.5 | Develop JUnit test cases |  | 7d | 2007-03-13 | 2007-03-21 | 547SS+2d | 1d |  | Sujith | 56h |
| 549 | 1.2.2.9 | **Testing** |  | 36d? | 2007-03-01 | 2007-04-19 |  | 16d |  |  | 1088h |
| 550 | 1.2.2.9.1 | **Test Plan** |  | 11d? | 2007-03-01 | 2007-03-15 |  | 136d |  |  | 88h |
| 551 | 1.2.2.9.1.1 | Update Test Plan Document (Task 3.6) |  | 10d | 2007-03-01 | 2007-03-14 | 434 | 136d | 0d | Ram | 80h |
| 552 | 1.2.2.9.1.2 | Submit to BAH | milestone | 0d | 2007-03-14 | 2007-03-14 | 551 | 136d | 0d | Edmond |  |
| 553 | 1.2.2.9.1.3 | Formal Review by BAH |  | 1d? | 2007-03-15 | 2007-03-15 | 552 | 136d |  | BAH | 8h |
| 554 | 1.2.2.9.2 | **Create Functional Tests** |  | 15d | 2007-03-01 | 2007-03-21 |  | 132d |  |  | 320h |
| 555 | 1.2.2.9.2.1 | Create Functional Tests for Use Cases |  | 10d | 2007-03-01 | 2007-03-14 | 434 | 132d | 0d | Renee; Natasha; Sean | 240h |
| 556 | 1.2.2.9.2.2 | Review by Adopters |  | 5d | 2007-03-15 | 2007-03-21 | 555 | 132d |  | Mayo; WF | 80h |
| 557 | 1.2.2.9.3 | **RTM** |  | 5d | 2007-03-15 | 2007-03-21 |  | 132d |  |  | 40h |
| 558 | 1.2.2.9.3.1 | Create RTM |  | 5d | 2007-03-15 | 2007-03-21 | 555 | 132d |  | Sean | 40h |
| 559 | 1.2.2.9.4 | **Test Data** |  | 20d | 2007-03-01 | 2007-03-28 |  | 127d |  |  | 400h |
| 560 | 1.2.2.9.4.1 | Create test data set (Task 3.7) |  | 10d | 2007-03-01 | 2007-03-14 | 434 | 127d | 0d | Renee; David | 160h |
| 561 | 1.2.2.9.4.2 | Submit for Review | milestone | 0d | 2007-03-14 | 2007-03-14 | 560 | 127d | 0d | Edmond |  |
| 562 | 1.2.2.9.4.3 | Review |  | 10d | 2007-03-15 | 2007-03-28 | 561 | 127d |  | BAH; Mayo; WF | 240h |
| 563 | 1.2.2.9.5 | **Testing** |  | 20d | 2007-03-23 | 2007-04-19 |  | 0d |  |  | 240h |
| 564 | 1.2.2.9.5.1 | Testing |  | 5d | 2007-03-23 | 2007-03-29 | 517 | 0d |  | Renee; David; Natasha | 120h |
| 565 | 1.2.2.9.5.2 | Submit Test Results Report (Task 3.7) | milestone | 0d | 2007-03-29 | 2007-03-29 | 564 | 111d | 0d | Edmond |  |
| 566 | 1.2.2.9.5.3 | Formal Review of Test results Report |  | 15d | 2007-03-30 | 2007-04-19 | 565 | 111d |  | BAH | 120h |

| ID | WBS | Task | Type | Duration | Start | Finish | Predecessors | Baseline start | Baseline finish | Baseline duration | Total slack | Free slack | Resources | Work |
| --- | --- | --- | --- | --- | --- | --- | --- | --- | --- | --- | --- | --- | --- | --- |
| 567 | 1.2.2.10 | **Deployment** |  | 15d | 2007-03-23 | 2007-04-12 |  |  |  |  | 3d |  |  | 144h |
| 568 | 1.2.2.10.1 | Submit prototype code (Task 3.5) | milestone | 0d | 2007-03-29 | 2007-03-29 | 564 |  |  |  | 116d | 0d | Ram |  |
| 569 | 1.2.2.10.2 | Formal Review of Code by BAH |  | 10d | 2007-03-30 | 2007-04-12 | 568 |  |  |  | 116d |  | BAH | 80h |
| 570 | 1.2.2.10.3 | Update Installation Guide |  | 2d | 2007-03-23 | 2007-03-26 | 517 |  |  |  | 3d |  | Krikor; Vinay | 32h |
| 571 | 1.2.2.10.4 | Deploy Prototype for Iteration 1 at Mayo and WF |  | 1d | 2007-03-30 | 2007-03-30 | 564, 570 |  |  |  | 0d |  | Vinay; Mayo; WF | 24h |
| 572 | 1.2.2.10.5 | Make URL Public |  | 1d | 2007-03-30 | 2007-03-30 | 564 |  |  |  | 125d |  | Vinay | 8h |
| 573 | 1.2.2.11 | Finish Iteration 2 | milestone | 0d | 2007-03-30 | 2007-03-30 | 571 | 2007-03-29 | 2007-04-04 | 5d | 0d |  |  |  |
| 574 | 1.2.3 | **Construction Phase Iteration 3** |  | 23d | 2007-03-30 | 2007-05-02 | 573 | 2007-04-04 | 2007-05-07 | 23d | 0d |  |  |  |
| 575 | 1.2.3.1 | Begin Iteration 3 | milestone | 0d | 2007-03-30 | 2007-03-30 |  | 2007-04-04 | 2007-04-04 | 0d | 0d |  |  |  |
| 576 | 1.2.3.2 | Environment Updates |  | 10d | 2007-04-02 | 2007-04-13 |  | 2007-04-05 | 2007-04-18 | 10d | 115d |  |  |  |
| 577 | 1.2.3.3 | Updates to Requirements, Use Case, UML, and Design Document |  | 20d | 2007-04-02 | 2007-04-27 |  | 2007-04-05 | 2007-05-02 | 20d | 105d |  |  |  |
| 578 | 1.2.3.4 | Test Plan and RTM Updates |  | 15d | 2007-04-02 | 2007-04-20 |  | 2007-04-05 | 2007-04-25 | 15d | 110d |  |  |  |
| 579 | 1.2.3.5 | Develop Code |  | 20d | 2007-04-02 | 2007-04-27 |  | 2007-04-05 | 2007-05-02 | 20d | 105d |  |  |  |
| 580 | 1.2.3.6 | Testing |  | 20d | 2007-04-02 | 2007-04-27 |  | 2007-04-05 | 2007-05-02 | 20d | 105d |  |  |  |
| 581 | 1.2.3.7 | Installation Guide Drafts |  | 5d | 2007-04-23 | 2007-04-27 | 582FS-5d | 2007-04-26 | 2007-05-02 | 5d | 105d |  |  |  |
| 582 | 1.2.3.8 | Finish Iteration 3 | milestone | 0d | 2007-04-27 | 2007-04-27 | 575FS+20d | 2007-05-02 | 2007-05-02 | 0d | 0d |  |  |  |
| 583 | 1.2.3.9 | Iteration 3 Review and Feedback |  | 5d | 2007-04-26 | 2007-05-02 | 582FS-2d | 2007-05-01 | 2007-05-07 | 5d | 0d |  |  |  |
| 584 | 1.2.4 | **Construction Phase Iteration 4** |  | 23d | 2007-05-02 | 2007-06-04 | 583 | 2007-05-07 | 2007-06-07 | 23d | 0d |  |  |  |
| 585 | 1.2.4.1 | Begin Iteration 4 | milestone | 0d | 2007-05-02 | 2007-05-02 |  | 2007-05-07 | 2007-05-07 | 0d | 0d |  |  |  |
| 586 | 1.2.4.2 | Environment Updates |  | 10d | 2007-05-03 | 2007-05-16 |  | 2007-05-08 | 2007-05-21 | 10d | 92d |  |  |  |
| 587 | 1.2.4.3 | Updates to Requirements, Use Case, UML, and Design Document |  | 20d | 2007-05-03 | 2007-05-30 |  | 2007-05-08 | 2007-06-04 | 20d | 82d |  |  |  |
| 588 | 1.2.4.4 | Test Plan and RTM Updates |  | 15d | 2007-05-03 | 2007-05-23 |  | 2007-05-08 | 2007-05-28 | 15d | 87d |  |  |  |
| 589 | 1.2.4.5 | Develop Code |  | 20d | 2007-05-03 | 2007-05-30 |  | 2007-05-08 | 2007-06-04 | 20d | 82d |  |  |  |
| 590 | 1.2.4.6 | Testing |  | 20d | 2007-05-03 | 2007-05-30 |  | 2007-05-08 | 2007-06-04 | 20d | 82d |  |  |  |
| 591 | 1.2.4.7 | Installation Guide Draft |  | 5d | 2007-05-24 | 2007-05-30 | 594FS-5d | 2007-05-29 | 2007-06-04 | 5d | 82d |  |  |  |
| 592 | 1.2.4.8 | Administrators Guide Draft |  | 5d | 2007-05-24 | 2007-05-30 | 594FS-5d | 2007-05-29 | 2007-06-04 | 5d | 82d |  |  |  |
| 593 | 1.2.4.9 | End User Guide Draft |  | 5d | 2007-05-24 | 2007-05-30 | 594FS-5d | 2007-05-29 | 2007-06-04 | 5d | 82d |  |  |  |
| 594 | 1.2.4.10 | Finish Iteration 4 | milestone | 0d | 2007-05-30 | 2007-05-30 | 585FS+20d | 2007-06-04 | 2007-06-04 | 0d | 0d |  |  |  |
| 595 | 1.2.4.11 | Iteration 4 Review and Feedback |  | 5d | 2007-05-29 | 2007-06-04 | 594FS-2d | 2007-06-01 | 2007-06-07 | 5d | 0d |  |  |  |

| ID | WBS | Task | Type | Duration | Start | Finish | Predecessors | Baseline start | Baseline finish | Baseline duration | Total slack | Free slack |
| --- | --- | --- | --- | --- | --- | --- | --- | --- | --- | --- | --- | --- |
| 596 | 1.2.5 | **Construction Phase Iteration 5** |  | 23d | 2007-06-04 | 2007-07-05 | 595 | 2007-06-07 | 2007-07-10 | 23d | 0d |  |
| 597 | 1.2.5.1 | Begin Iteration 5 | milestone | 0d | 2007-06-04 | 2007-06-04 |  | 2007-06-07 | 2007-06-07 | 0d | 0d |  |
| 598 | 1.2.5.2 | Environment Updates |  | 10d | 2007-06-05 | 2007-06-18 |  | 2007-06-08 | 2007-06-21 | 10d | 69d |  |
| 599 | 1.2.5.3 | Updates to Requirements, Use Case, UML, and Design Document |  | 20d | 2007-06-05 | 2007-07-02 |  | 2007-06-08 | 2007-07-05 | 20d | 59d |  |
| 600 | 1.2.5.4 | Test Plan and RTM Updates |  | 15d | 2007-06-05 | 2007-06-25 |  | 2007-06-08 | 2007-06-28 | 15d | 64d |  |
| 601 | 1.2.5.5 | Develop Code |  | 20d | 2007-06-05 | 2007-07-02 |  | 2007-06-08 | 2007-07-05 | 20d | 59d |  |
| 602 | 1.2.5.6 | Testing |  | 20d | 2007-06-05 | 2007-07-02 |  | 2007-06-08 | 2007-07-05 | 20d | 59d |  |
| 603 | 1.2.5.7 | Testing Results |  | 5d | 2007-06-26 | 2007-07-02 | 607FS-5d | 2007-06-29 | 2007-07-05 | 5d | 59d |  |
| 604 | 1.2.5.8 | Installation Guide Draft |  | 5d | 2007-06-26 | 2007-07-02 | 607FS-5d | 2007-06-29 | 2007-07-05 | 5d | 59d |  |
| 605 | 1.2.5.9 | Administrators Guide Draft |  | 5d | 2007-06-26 | 2007-07-02 | 607FS-5d | 2007-06-29 | 2007-07-05 | 5d | 59d |  |
| 606 | 1.2.5.10 | End User Guide Draft |  | 5d | 2007-06-05 | 2007-06-11 |  | 2007-06-08 | 2007-06-14 | 5d | 74d |  |
| 607 | 1.2.5.11 | Finish Iteration 5 | milestone | 0d | 2007-07-02 | 2007-07-02 | 597FS+20d | 2007-07-05 | 2007-07-05 | 0d | 0d |  |
| 608 | 1.2.5.12 | Iteration 5 Review and Feedback |  | 5d | 2007-06-29 | 2007-07-05 | 607FS-2d | 2007-07-04 | 2007-07-10 | 5d | 0d |  |
| 609 | 1.2.6 | **Construction Phase Iteration 6** |  | 23d | 2007-07-05 | 2007-08-07 | 608 | 2007-07-10 | 2007-08-10 | 23d | 0d |  |
| 610 | 1.2.6.1 | Begin Iteration 6 | milestone | 0d | 2007-07-05 | 2007-07-05 |  | 2007-07-10 | 2007-07-10 | 0d | 0d |  |
| 611 | 1.2.6.2 | Environment Updates |  | 10d | 2007-07-06 | 2007-07-19 |  | 2007-07-11 | 2007-07-24 | 10d | 46d |  |
| 612 | 1.2.6.3 | Updates to Requirements, Use Case, UML, and Design Document |  | 20d | 2007-07-06 | 2007-08-02 |  | 2007-07-11 | 2007-08-07 | 20d | 36d |  |
| 613 | 1.2.6.4 | Test Plan and RTM Updates |  | 15d | 2007-07-06 | 2007-07-26 |  | 2007-07-11 | 2007-07-31 | 15d | 41d |  |
| 614 | 1.2.6.5 | Develop Code |  | 20d | 2007-07-06 | 2007-08-02 |  | 2007-07-11 | 2007-08-07 | 20d | 36d |  |
| 615 | 1.2.6.6 | Installation Guide Draft |  | 5d | 2007-07-27 | 2007-08-02 | 620FS-5d | 2007-08-01 | 2007-08-07 | 5d | 36d |  |
| 616 | 1.2.6.7 | Administrators Guide Draft |  | 5d | 2007-07-27 | 2007-08-02 | 620FS-5d | 2007-08-01 | 2007-08-07 | 5d | 36d |  |
| 617 | 1.2.6.8 | End User Guide Draft |  | 5d | 2007-07-27 | 2007-08-02 | 620FS-5d | 2007-08-01 | 2007-08-07 | 5d | 36d |  |
| 618 | 1.2.6.9 | Testing |  | 20d | 2007-07-06 | 2007-08-02 |  | 2007-07-11 | 2007-08-07 | 20d | 36d | 0d |
| 619 | 1.2.6.10 | Testing Results |  | 5d | 2007-07-27 | 2007-08-02 | 618FS-5d | 2007-08-01 | 2007-08-07 | 5d | 36d |  |
| 620 | 1.2.6.11 | Finish Iteration 6 | milestone | 0d | 2007-08-02 | 2007-08-02 | 610FS+20d | 2007-08-07 | 2007-08-07 | 0d | 0d |  |
| 621 | 1.2.6.12 | Iteration 6 Review and Feedback |  | 5d | 2007-08-01 | 2007-08-07 | 620FS-2d | 2007-08-06 | 2007-08-10 | 5d | 0d |  |

| ID | WBS | Task | Type | Duration | Start | Finish | Predecessors | Baseline start | Baseline finish | Baseline duration | Total slack | Free slack |
| --- | --- | --- | --- | --- | --- | --- | --- | --- | --- | --- | --- | --- |
| 622 | 1.2.7 | **Construction Phase Iteration 7** |  | 23d | 2007-08-07 | 2007-09-07 | 621 | 2007-08-10 | 2007-09-12 | 23d | 0d |  |
| 623 | 1.2.7.1 | Begin Iteration 7 | milestone | 0d | 2007-08-07 | 2007-08-07 |  | 2007-08-10 | 2007-08-10 | 0d | 0d |  |
| 624 | 1.2.7.2 | Environment Updates |  | 10d | 2007-08-08 | 2007-08-21 |  | 2007-08-13 | 2007-08-24 | 10d | 23d |  |
| 625 | 1.2.7.3 | Finalize Requirements, Use Case, UML, and Design Document |  | 10d | 2007-08-08 | 2007-08-21 |  | 2007-08-13 | 2007-08-24 | 10d | 13d | 0d |
| 626 | 1.2.7.4 | Test Plan and RTM Updates (Task 3.6) |  | 15d | 2007-08-08 | 2007-08-28 |  | 2007-08-13 | 2007-08-31 | 15d | 18d |  |
| 627 | 1.2.7.5 | Finalize Code Base (Task 3.5) |  | 20d | 2007-08-08 | 2007-09-04 |  | 2007-08-13 | 2007-09-07 | 20d | 13d |  |
| 628 | 1.2.7.6 | Testing |  | 20d | 2007-08-08 | 2007-09-04 |  | 2007-08-13 | 2007-09-07 | 20d | 13d |  |
| 629 | 1.2.7.7 | Final Test Results Report (3.8) |  | 5d | 2007-08-29 | 2007-09-04 | 637FS-5d | 2007-09-03 | 2007-09-07 | 5d | 13d |  |
| 630 | 1.2.7.8 | Final Transition Phase Plan (3.16) |  | 5d | 2007-08-29 | 2007-09-04 | 637FS-5d | 2007-09-03 | 2007-09-07 | 5d | 13d |  |
| 631 | 1.2.7.9 | Compatibility Review Submission Package (Task 3.12) |  | 10d | 2007-08-22 | 2007-09-04 | 637FS-10d | 2007-08-27 | 2007-09-07 | 10d | 13d |  |
| 632 | 1.2.7.10 | Generation of CDEs (Task 3.11.2) |  | 10d | 2007-08-22 | 2007-09-04 | 625 | 2007-08-27 | 2007-09-07 | 10d | 13d |  |
| 633 | 1.2.7.11 | Final Administrators Guide (Task 3.13) |  | 5d | 2007-08-29 | 2007-09-04 | 637FS-5d | 2007-09-03 | 2007-09-07 | 5d | 13d |  |
| 634 | 1.2.7.12 | Final End Users Guide (Task 3.15.2) |  | 5d | 2007-08-29 | 2007-09-04 | 637FS-5d | 2007-09-03 | 2007-09-07 | 5d | 13d |  |
| 635 | 1.2.7.13 | Final Installation Guide (Task 3.10) |  | 5d | 2007-08-29 | 2007-09-04 | 637FS-5d | 2007-09-03 | 2007-09-07 | 5d | 13d |  |
| 636 | 1.2.7.14 | Release Notes (Task 3.14) |  | 5d | 2007-08-29 | 2007-09-04 | 637FS-5d | 2007-09-03 | 2007-09-07 | 5d | 13d |  |
| 637 | 1.2.7.15 | Finish Iteration 7 | milestone | 0d | 2007-09-04 | 2007-09-04 | 623FS+20d | 2007-09-07 | 2007-09-07 | 0d | 0d |  |
| 638 | 1.2.7.16 | Iteration 7 Review and Feedback |  | 5d | 2007-09-03 | 2007-09-07 | 637FS-2d | 2007-09-06 | 2007-09-12 | 5d | 0d |  |
| 639 | 1.2.8 | Finish Construction Phase | milestone | 0d | 2007-09-07 | 2007-09-07 | 638 | 2007-09-12 | 2007-09-12 | 0d | 0d |  |
| 640 | 1.3 | **Transition Phase** |  | 10d | 2007-09-10 | 2007-09-21 | 639 | 2007-09-13 | 2007-09-26 | 10d | 0d |  |
| 641 | 1.3.1 | Deployment Plan (Task 4.1) |  | 2d | 2007-09-10 | 2007-09-11 |  | 2007-09-13 | 2007-09-14 | 2d | 3d | 0d |
| 642 | 1.3.2 | Deployment |  | 5d | 2007-09-12 | 2007-09-18 | 641 | 2007-09-17 | 2007-09-21 | 5d | 3d |  |
| 643 | 1.3.3 | Deployment Report (Task 4.2) |  | 1d | 2007-09-10 | 2007-09-10 |  | 2007-09-13 | 2007-09-13 | 1d | 9d |  |
| 644 | 1.3.4 | Code Release Updates (if needed) (Task 4.3) |  | 10d | 2007-09-10 | 2007-09-21 |  | 2007-09-13 | 2007-09-26 | 10d | 0d |  |
| 645 | 1.3.5 | Guide Updates (if needed) |  | 10d | 2007-09-10 | 2007-09-21 |  | 2007-09-13 | 2007-09-26 | 10d | 0d |  |

| ID | WBS | Task | Duration | Start | Finish | Baseline start | Baseline finish | Baseline duration | Total slack |
| --- | --- | --- | --- | --- | --- | --- | --- | --- | --- |
| 646 | 1.3.6 | **Project Closing Activities** | 10d | 2007-09-10 | 2007-09-21 | 2007-09-13 | 2007-09-26 | 10d | 0d |
| 647 | 1.3.6.1 | Lessons Learned (Task 1.6) | 10d | 2007-09-10 | 2007-09-21 | 2007-09-13 | 2007-09-26 | 10d | 0d |
| 648 | 1.3.6.2 | Archiving | 10d | 2007-09-10 | 2007-09-21 | 2007-09-13 | 2007-09-26 | 10d | 0d |
| 649 | 1.3.6.3 | Contract Closeout | 10d | 2007-09-10 | 2007-09-21 | 2007-09-13 | 2007-09-26 | 10d | 0d |
